# caArray2.0-DeploymentActivities

Schedule from MS Project, 2007-11-16 to 2007-12-14.
Sony Electronics, Inc.

## Calendars

- Standard: Mon-Fri 08:00-12:00, 13:00-17:00; Sat-Sun off.

## Resources

| Resource |
| --- |
| juli |
| jill |
| mduncan |

## Schedule

| ID | WBS | Task | Type | Duration | Start | Finish | Predecessors | Total slack | Free slack | Constraint | Resources | Work |
| --- | --- | --- | --- | --- | --- | --- | --- | --- | --- | --- | --- | --- |
| 1 | 1 | **Configuration and Change Management** |  | 21d? | 2007-11-16 | 2007-12-14 |  | 0d |  |  |  | 544h |
| 2 | 1.1 | **Documentation** |  | 21d? | 2007-11-16 | 2007-12-14 |  | 0d |  |  |  | 464h |
| 3 | 1.1.1 | End User Guide |  | 21d? | 2007-11-16 | 2007-12-14 |  | 0d |  | finish no earlier than 2007-12-14 | jill | 168h |
| 4 | 1.1.2 | Online Help |  | 17d? | 2007-11-16 | 2007-12-10 |  | 15d |  | finish no earlier than 2007-12-10 | jill | 136h |
| 5 | 1.5.1.7.3.1 | Technical Guide |  | 1d? | 2007-11-30 | 2007-11-30 |  | -90d | 0d |  |  |  |
| 6 | 1.1.4 | Tech Guide |  | 10d? | 2007-12-03 | 2007-12-14 | 5 | 0d |  | finish no earlier than 2007-12-14 | jill | 80h |
| 7 | 1.5.1.7.3.3 | Installation Guide |  | 1d? | 2007-11-30 | 2007-11-30 |  | -90d | 0d |  |  |  |
| 8 | 1.1.6 | Installation Guide |  | 10d? | 2007-12-03 | 2007-12-14 | 7 | 0d |  | finish no earlier than 2007-12-14 | jill | 80h |
| 9 | 1.2 | **caArray website (zope site) update** |  | 19d? | 2007-11-19 | 2007-12-14 |  | 1d |  |  |  | 24h |
| 10 | 1.2.1 | Initial Content Change |  | 3d? | 2007-11-19 | 2007-11-21 |  | 17d |  | start no earlier than 2007-11-19 | juli | 24h |
| 11 | 1.2.2 | Format Change |  | 1d? | 2007-11-28 | 2007-11-28 |  | 6d | 0d | finish no earlier than 2007-11-28 |  |  |
| 12 | 1.2.3 | Release Content Change #1 to DEV |  | 1d? | 2007-11-29 | 2007-11-29 | 11 | 6d | 0d |  |  |  |
| 13 | 1.2.4 | Website Review #1 |  | 1d? | 2007-11-30 | 2007-11-30 | 12 | 6d | 0d |  |  |  |
| 14 | 1.2.5 | Content Update |  | 1d? | 2007-12-03 | 2007-12-03 | 13 | 6d | 0d |  |  |  |
| 15 | 1.2.6 | Release Content Change #2 to DEV |  | 1d? | 2007-12-04 | 2007-12-04 | 14 | 6d | 0d |  |  |  |
| 16 | 1.2.7 | Website Review #2 |  | 1d? | 2007-12-05 | 2007-12-05 | 15 | 6d | 0d |  |  |  |
| 17 | 1.2.8 | Milestone: Release Content to DEV | milestone | 0d | 2007-12-06 | 2007-12-06 | 34 | 6d | 0d |  |  |  |
| 18 | 1.2.9 | Milestone: Release Content to QA | milestone | 0d | 2007-12-06 | 2007-12-06 | 17 | 6d | 0d |  |  |  |
| 19 | 1.2.10 | Milestone: Release Content to Stage | milestone | 0d | 2007-12-06 | 2007-12-06 | 18 | 6d | 5d | start no earlier than 2007-12-06 |  |  |
| 20 | 1.2.11 | Milestone: Release Content to PRODUCTION | milestone | 0d | 2007-12-14 | 2007-12-14 | 19 | 1d |  | start no earlier than 2007-12-14 |  |  |
| 21 | 1.3 | **Download Center Update** |  | 12d? | 2007-11-28 | 2007-12-14 |  | 1d |  |  |  | 56h |
| 22 | 1.3.1 | Update License Statement (reflect 2.0) |  | 1d? | 2007-11-28 | 2007-11-28 |  | 12d |  | start no earlier than 2007-11-28 | mduncan | 8h |
| 23 | 1.3.2 | Website content change |  | 3d? | 2007-11-28 | 2007-11-30 |  | 10d |  | finish no earlier than 2007-11-30 | mduncan | 24h |
| 24 | 1.3.3 | Add archives page (caArray 1.6 info) |  | 3d? | 2007-11-28 | 2007-11-30 |  | 10d | 1d | finish no earlier than 2007-11-30 | mduncan | 24h |
| 25 | 1.3.4 | Milestone: Release Content to DEV | milestone | 0d | 2007-12-04 | 2007-12-04 | 24 | 9d | 1d | start no earlier than 2007-12-04 |  |  |
| 26 | 1.3.5 | Milestone: Release Content to QA | milestone | 0d | 2007-12-05 | 2007-12-05 | 25 | 8d | 1d | start no earlier than 2007-12-05 |  |  |
| 27 | 1.3.6 | Milestone: Release Content to Stage | milestone | 0d | 2007-12-06 | 2007-12-06 | 26 | 7d | 6d | start no earlier than 2007-12-06 |  |  |
| 28 | 1.3.7 | Milestone: Release Content to PRODUCTION | milestone | 0d | 2007-12-14 | 2007-12-14 | 27 | 1d |  | start no earlier than 2007-12-14 |  |  |

| ID | WBS | Task | Type | Duration | Start | Finish | Predecessors | Total slack | Free slack | Constraint | Resources |
| --- | --- | --- | --- | --- | --- | --- | --- | --- | --- | --- | --- |
| 29 | 1.4 | **gForge Update** |  | 2d | 2007-12-13 | 2007-12-14 |  | 0d |  |  |  |
| 30 | 1.4.1 | Release documentation package to gForge |  | 1d | 2007-12-13 | 2007-12-13 |  | 1d |  | start no earlier than 2007-12-13 |  |
| 31 | 1.4.2 | Release release notes to gForge |  | 1d | 2007-12-13 | 2007-12-13 |  | 1d |  | start no earlier than 2007-12-13 |  |
| 32 | 1.4.3 | Release source file to gForge |  | 1d | 2007-12-14 | 2007-12-14 |  | 0d |  | start no earlier than 2007-12-14 |  |
| 33 | 1.5 | **Release Announcement to the Community** |  | 6d? | 2007-12-06 | 2007-12-14 |  | 1d |  |  |  |
| 34 | 1.5.1 | Website Approval |  | 1d? | 2007-12-06 | 2007-12-06 | 16 | 6d | 0d |  |  |
| 35 | 1.5.2 | Milestone: Distribute caArray 2.0 Release Announcement | milestone | 0d | 2007-12-14 | 2007-12-14 |  | 1d |  | start no earlier than 2007-12-14 |  |
| 36 | 2 | **caArray Data Migration Activities (1.6 to 2.0)** |  | 15d? | 2007-11-26 | 2007-12-14 |  | 0d |  |  |  |
| 37 | 2.1 | Milestone: Release Content to QA | milestone | 0d | 2007-12-05 | 2007-12-05 | 25 | 8d | 1d | start no earlier than 2007-12-05 | mduncan |
| 38 | 2.2 | Milestone: Release Content to Stage | milestone | 0d | 2007-12-06 | 2007-12-06 | 37 | 7d | 6d | start no earlier than 2007-12-06 | mduncan |
| 39 | 2.3 | Milestone: Release Content to PRODUCTION | milestone | 0d | 2007-12-14 | 2007-12-14 | 38 | 1d |  | start no earlier than 2007-12-14 | mduncan |
| 40 | 2.4 | Draft caArray 2.0 Release Announcement |  | 1d? | 2007-12-13 | 2007-12-13 |  | 1d |  | start no earlier than 2007-12-13 |  |
| 41 | 2.5 | Document caArray data migration design |  | 10d? | 2007-11-26 | 2007-12-07 |  | 5d |  | finish no earlier than 2007-12-07 |  |
| 42 | 2.6 | Implement data migration |  | 3d? | 2007-11-27 | 2007-11-29 |  | 9d | 0d | finish no earlier than 2007-11-29 |  |
| 43 | 2.7 | Test data migration |  | 1d? | 2007-11-30 | 2007-11-30 | 42 | 9d | 0d |  |  |
| 44 | 2.8 | QA test data migration |  | 1d? | 2007-12-03 | 2007-12-03 | 43 | 9d |  |  |  |
| 45 | 2.9 | Milestone: caArray data migration on Staging |  | 1d? | 2007-12-14 | 2007-12-14 |  | 0d |  | start no earlier than 2007-12-14 |  |
| 46 | 2.10 | Milestone: caArray data migration on Production |  | 1d? | 2007-12-14 | 2007-12-14 |  | 0d |  | start no earlier than 2007-12-14 |  |
