# caarray_2_2_1

Schedule from MS Project, 2008-10-13 to 2009-06-30, A marks actual dates.
Sony Electronics, Inc.

## Calendars

- Standard: Mon-Fri 08:00-12:00, 13:00-17:00; Sat-Sun off.

## Resources

| Resource |
| --- |
| mshestopalov |
| misquitt |
| reddya2 |
| khannave |
| qabox |
| stagebox |
| liujj |

## Schedule

| ID | WBS | Task | Type | Duration | Start | Finish | Predecessors | Complete | Remaining | Total slack | Free slack | Constraint | Resources | Work | Actual work |
| --- | --- | --- | --- | --- | --- | --- | --- | --- | --- | --- | --- | --- | --- | --- | --- |
| 1 | 1 | **caArray 2.2.1** |  | 187d? | 2008-10-13 A | 2009-06-30 |  | 32% | 127.84d? | 0d |  |  |  | 648h | 144h |
| 2 | 1.1 | **Construction Beta** |  | 13d | 2009-02-16 A | 2009-03-04 A |  | 100% |  |  |  |  |  | 80h | 80h |
| 3 | 1.1.1 | **Implementation** |  | 5d | 2009-02-19 A | 2009-02-25 A |  | 100% |  |  |  |  |  | 40h | 40h |
| 4 | 1.1.1.1 | Implement Beta items |  | 4d | 2009-02-19 A | 2009-02-24 A |  | 100% |  |  |  | finish no earlier than 2009-02-24 | mshestopalov | 32h | 32h |
| 5 | 1.1.1.2 | Verify Beta items on DEV tier |  | 1d | 2009-02-25 A | 2009-02-25 A | 4 | 100% |  |  |  |  | mshestopalov | 8h | 8h |
| 6 | 1.1.1.3 | Milestone: Deploy Beta to QA-VM | milestone | 0d | 2009-02-25 A | 2009-02-25 A | 5 | 100% |  |  |  |  |  |  |  |
| 7 | 1.1.2 | **IQA Testing** |  | 13d | 2009-02-16 A | 2009-03-04 A |  | 100% |  |  |  |  |  | 40h | 40h |
| 8 | 1.1.2.1 | UAT new items on QA |  | 5d | 2009-02-26 A | 2009-03-04 A | 6 | 100% |  |  |  |  | liujj | 40h | 40h |
| 9 | 1.1.2.2 | Milestone: Complete Beta Testing | milestone | 0d | 2009-02-16 A | 2009-02-16 A |  | 100% |  |  |  |  |  |  |  |
| 10 | 1.1.3 | Milestone: Complete Beta Construction | milestone | 0d | 2009-02-25 A | 2009-02-25 A | 6, 9 | 100% |  |  |  |  |  |  |  |
| 11 | 1.2 | **Construction RC1** |  | 37d? | 2009-03-02 A | 2009-04-21 |  | 64% | 13.32d? | 50d |  |  |  | 192h | 64h |
| 12 | 1.2.1 | **Implementation** |  | 24d? | 2009-03-02 A | 2009-04-02 A | 6 | 100% |  |  |  |  |  |  |  |
| 13 | 1.2.1.1 | Implement RC1 items |  | 23d? | 2009-03-02 A | 2009-04-01 A | 6 | 100% |  |  |  | finish no earlier than 2009-04-01 |  |  |  |
| 14 | 1.2.1.2 | Verify RC1 items on DEV tier |  | 1d | 2009-04-02 A | 2009-04-02 A | 13 | 100% |  |  |  |  |  |  |  |
| 15 | 1.2.1.3 | Milestone: Deploy RC1 to QA | milestone | 0d | 2009-04-02 A | 2009-04-02 A | 14 | 100% |  |  |  |  |  |  |  |
| 16 | 1.2.2 | **IQA Testing** |  | 13d | 2009-04-03 A | 2009-04-21 | 15 | 31% | 9d | 50d | 0d |  |  | 192h | 64h |
| 17 | 1.2.2.1 | 221RC1: Verify new items on QA |  | 5d | 2009-04-03 A | 2009-04-09 A | 15 | 100% |  |  |  |  | misquitt | 40h | 40h |
| 18 | 1.2.2.2 | 221RC1: Regression test on QA |  | 3d | 2009-04-03 A | 2009-04-07 A | 15 | 100% |  |  |  |  | khannave | 24h | 24h |
| 19 | 1.2.2.3 | Deployment test on QA-VM |  | 2d | 2009-04-03 | 2009-04-06 | 15 |  |  | 61d |  |  |  |  |  |
| 20 | 1.2.2.4 | Installer test |  | 3d | 2009-04-03 | 2009-04-07 | 15 |  |  | 35d | 0d |  | reddya2 | 24h |  |
| 21 | 1.2.2.5 | App scan on QA |  | 3d | 2009-04-10 | 2009-04-14 | 17, 18 |  |  | 30d | 0d |  | qabox | 24h |  |
| 22 | 1.2.2.6 | Deploy RC1 to STAGE |  | 2d | 2009-04-10 | 2009-04-13 | 17, 18 |  |  | 50d | 0d |  | stagebox | 16h |  |
| 23 | 1.2.2.7 | 221RC1: Verify new items on STAGE |  | 2d | 2009-04-14 | 2009-04-15 | 22 |  |  | 51d | 1d |  | misquitt | 16h |  |
| 24 | 1.2.2.8 | 221RC1: Regression test on STAGE |  | 3d | 2009-04-14 | 2009-04-16 | 22 |  |  | 50d | 0d |  | khannave | 24h |  |
| 25 | 1.2.2.9 | App scan on STAGE |  | 3d | 2009-04-17 | 2009-04-21 | 21, 23, 24 |  |  | 50d | 0d |  | stagebox | 24h |  |
| 26 | 1.2.2.10 | Milestone: Complete RC2 Testing | milestone | 0d | 2009-04-21 | 2009-04-21 | 25 |  |  | 50d |  |  |  |  |  |
| 27 | 1.2.3 | Milestone: Complete RC1 Construction | milestone | 0d | 2009-04-21 | 2009-04-21 | 15, 16 |  |  | 50d |  |  |  |  |  |

| ID | WBS | Task | Type | Duration | Start | Finish | Predecessors | Total slack | Free slack | Resources | Work |
| --- | --- | --- | --- | --- | --- | --- | --- | --- | --- | --- | --- |
| 28 | 1.3 | **Construction RC2** |  | 15d | 2009-04-15 | 2009-05-05 |  | 30d |  |  | 184h |
| 29 | 1.3.1 | **Implementation** |  | 4d | 2009-04-15 | 2009-04-20 |  | 30d |  |  |  |
| 30 | 1.3.1.1 | Implement RC2 items |  | 3d | 2009-04-15 | 2009-04-17 | 17, 18, 20, 21 | 30d | 0d |  |  |
| 31 | 1.3.1.2 | Verify RC2 items on DEV tier |  | 1d | 2009-04-20 | 2009-04-20 | 30 | 30d | 0d |  |  |
| 32 | 1.3.1.3 | Milestone: Deploy R2 to QA | milestone | 0d | 2009-04-20 | 2009-04-20 | 31 | 30d | 0d |  |  |
| 33 | 1.3.2 | **IQA Testing** |  | 11d | 2009-04-21 | 2009-05-05 | 32 | 30d |  |  | 184h |
| 34 | 1.3.2.1 | 221RC2: Verify defects on QA |  | 3d | 2009-04-21 | 2009-04-23 | 32 | 30d | 0d | misquitt | 24h |
| 35 | 1.3.2.2 | 221RC2: Regression test on QA |  | 3d | 2009-04-21 | 2009-04-23 | 32 | 30d | 0d | khannave | 24h |
| 36 | 1.3.2.3 | Deployment test on QA-VM |  | 2d | 2009-04-21 | 2009-04-22 | 32 | 49d |  |  |  |
| 37 | 1.3.2.4 | Installer test |  | 3d | 2009-04-21 | 2009-04-23 | 32 | 48d |  | reddya2 | 24h |
| 38 | 1.3.2.5 | App scan on QA |  | 3d | 2009-04-24 | 2009-04-28 | 34, 35 | 37d | 2d | qabox | 24h |
| 39 | 1.3.2.6 | Deploy RC2 to Stage |  | 2d | 2009-04-24 | 2009-04-27 | 34, 35 | 35d | 0d | stagebox | 16h |
| 40 | 1.3.2.7 | 221RC2: Verify defects on STAGE |  | 3d | 2009-04-28 | 2009-04-30 | 39 | 35d | 0d | misquitt | 24h |
| 41 | 1.3.2.8 | 221RC2: Regression test on STAGE |  | 3d | 2009-04-28 | 2009-04-30 | 39 | 35d | 0d | khannave | 24h |
| 42 | 1.3.2.9 | App scan on STAGE |  | 3d | 2009-05-01 | 2009-05-05 | 38, 40, 41 | 35d | 0d | stagebox | 24h |
| 43 | 1.3.2.10 | Milestone: Complete RC2 Testing | milestone | 0d | 2009-05-05 | 2009-05-05 | 42 | 35d | 0d |  |  |
| 44 | 1.3.3 | Milestone: Complete RC2 Construction | milestone | 0d | 2009-05-05 | 2009-05-05 | 43 | 35d | 0d |  |  |
| 45 | 1.4 | **Construction RC3** |  | 15d | 2009-04-24 | 2009-05-14 |  | 30d |  |  | 192h |
| 46 | 1.4.1 | **Implementation** |  | 4d | 2009-04-24 | 2009-04-29 |  | 30d |  |  |  |
| 47 | 1.4.1.1 | Implement RC3 items |  | 3d | 2009-04-24 | 2009-04-28 | 34, 35 | 30d | 0d |  |  |
| 48 | 1.4.1.2 | Verify RC3 items on DEV tier |  | 1d | 2009-04-29 | 2009-04-29 | 47 | 30d | 0d |  |  |
| 49 | 1.4.1.3 | Milestone: Deploy R3 to QA | milestone | 0d | 2009-04-29 | 2009-04-29 | 48 | 30d | 0d |  |  |
| 50 | 1.4.2 | **IQA Testing** |  | 11d | 2009-04-30 | 2009-05-14 | 49 | 30d |  |  | 192h |
| 51 | 1.4.2.1 | 221RC3: Verify defects on QA |  | 2d | 2009-04-30 | 2009-05-01 | 49 | 31d | 1d | misquitt | 16h |
| 52 | 1.4.2.2 | 221RC3: Regression test on QA |  | 3d | 2009-04-30 | 2009-05-04 | 49 | 30d | 0d | khannave | 24h |
| 53 | 1.4.2.3 | Deployment test on QA-VM |  | 2d | 2009-04-30 | 2009-05-01 | 49 | 42d |  |  |  |
| 54 | 1.4.2.4 | Installer test |  | 5d | 2009-04-30 | 2009-05-06 | 49 | 39d |  | reddya2 | 40h |
| 55 | 1.4.2.5 | App scan on QA |  | 3d | 2009-05-05 | 2009-05-07 | 51, 52 | 32d | 2d | qabox | 24h |
| 56 | 1.4.2.6 | Deploy RC3 to Stage |  | 2d | 2009-05-05 | 2009-05-06 | 51, 52 | 30d | 0d | stagebox | 16h |
| 57 | 1.4.2.7 | 221RC3: Verify defects on STAGE |  | 3d | 2009-05-07 | 2009-05-11 | 56 | 30d | 0d | misquitt | 24h |
| 58 | 1.4.2.8 | 221RC3: Regression test on STAGE |  | 3d | 2009-05-07 | 2009-05-11 | 56 | 30d | 0d | khannave | 24h |
| 59 | 1.4.2.9 | App scan on STAGE |  | 3d | 2009-05-12 | 2009-05-14 | 55, 57, 58 | 30d | 0d | stagebox | 24h |
| 60 | 1.4.2.10 | Milestone: Complete RC3 Testing | milestone | 0d | 2009-05-14 | 2009-05-14 | 59 | 30d | 0d |  |  |
| 61 | 1.4.3 | Milestone: Complete RC3 Construction | milestone | 0d | 2009-05-14 | 2009-05-14 | 60 | 30d | 0d |  |  |

| ID | WBS | Task | Type | Duration | Start | Finish | Predecessors | Complete | Remaining | Total slack | Free slack |
| --- | --- | --- | --- | --- | --- | --- | --- | --- | --- | --- | --- |
| 62 | 1.5 | **Transition** |  | 187d | 2008-10-13 A | 2009-06-30 |  | 30% | 131.56d | 0d |  |
| 63 | 1.5.1 | **CBIIT Deployment** |  | 3d | 2009-05-15 | 2009-05-19 |  |  |  | 30d |  |
| 64 | 1.5.1.1 | Deploy to PROD |  | 2d | 2009-05-15 | 2009-05-18 | 61 |  |  | 30d | 0d |
| 65 | 1.5.1.2 | Verify PROD deployment |  | 1d | 2009-05-19 | 2009-05-19 | 64 |  |  | 30d | 0d |
| 66 | 1.5.1.3 | Milestone: Complete PROD deployment | milestone | 0d | 2009-05-19 | 2009-05-19 | 65 |  |  | 30d | 0d |
| 67 | 1.5.2 | **All Release Artifacts** |  | 49d | 2009-03-05 | 2009-05-12 |  |  |  | 35d | 5d |
| 68 | 1.5.2.1 | **User's Guide** |  | 11d | 2009-03-05 | 2009-03-19 |  |  |  | 69d |  |
| 69 | 1.5.2.1.1 | Send changes to Jill |  | 1d | 2009-03-05 | 2009-03-05 | 8 |  |  | 69d | 0d |
| 70 | 1.5.2.1.2 | Update User's Guide |  | 5d | 2009-03-06 | 2009-03-12 | 69 |  |  | 69d | 0d |
| 71 | 1.5.2.1.3 | Revise User's Guide after review |  | 5d | 2009-03-13 | 2009-03-19 | 70 |  |  | 69d | 0d |
| 72 | 1.5.2.1.4 | Milestone: Complete User's Guide | milestone | 0d | 2009-03-19 | 2009-03-19 | 71 |  |  | 69d | 26d |
| 73 | 1.5.2.2 | **Installation Guide** |  | 7d | 2009-04-08 | 2009-04-16 |  |  |  | 49d |  |
| 74 | 1.5.2.2.1 | Send changes to Jill |  | 1d | 2009-04-08 | 2009-04-08 | 20 |  |  | 49d | 0d |
| 75 | 1.5.2.2.2 | Update Installation Guide |  | 3d | 2009-04-09 | 2009-04-13 | 74 |  |  | 49d | 0d |
| 76 | 1.5.2.2.3 | Revise Installation Guide after review |  | 3d | 2009-04-14 | 2009-04-16 | 75 |  |  | 49d | 0d |
| 77 | 1.5.2.2.4 | Milestone: Complete Installation Guide | milestone | 0d | 2009-04-16 | 2009-04-16 | 76 |  |  | 49d | 14d |
| 78 | 1.5.2.3 | **Other Release Artifacts** |  | 9d | 2009-04-24 | 2009-05-06 |  |  |  | 35d |  |
| 79 | 1.5.2.3.1 | Prepare Release Notes |  | 1d | 2009-04-24 | 2009-04-24 | 34 |  |  | 43d | 8d |
| 80 | 1.5.2.3.2 | Prepare Client Libraries and javadoc |  | 1d | 2009-05-06 | 2009-05-06 | 44 |  |  | 35d | 0d |
| 81 | 1.5.2.3.3 | Prepare installer packages |  | 1d | 2009-05-06 | 2009-05-06 | 44 |  |  | 35d | 0d |
| 82 | 1.5.2.3.4 | Milestone: Complete other release artifacts | milestone | 0d | 2009-05-06 | 2009-05-06 | 79, 80, 81 |  |  | 35d | 0d |
| 83 | 1.5.2.4 | **Update sites and Announce release** |  | 4d | 2009-05-07 | 2009-05-12 | 72, 77, 82 |  |  | 35d |  |
| 84 | 1.5.2.4.1 | Update caArray Gforge site |  | 1d | 2009-05-07 | 2009-05-07 |  |  |  | 38d |  |
| 85 | 1.5.2.4.2 | Update Download Centre page |  | 4d | 2009-05-07 | 2009-05-12 |  |  |  | 35d |  |
| 86 | 1.5.2.4.3 | Update Tools page |  | 1d | 2009-05-07 | 2009-05-07 |  |  |  | 38d |  |
| 87 | 1.5.2.4.4 | Update Landing site |  | 1d | 2009-05-07 | 2009-05-07 |  |  |  | 38d |  |
| 88 | 1.5.2.4.5 | Update LSD Gforge site |  | 1d | 2009-05-07 | 2009-05-07 |  |  |  | 38d |  |
| 89 | 1.5.3 | caArray 2.20 Closeout | milestone | 0d | 2009-05-19 | 2009-05-19 | 67, 66 |  |  | 30d |  |
| 90 | 1.5.4 | caarray_schedule_2_3_0 |  | 187d | 2008-10-13 A | 2009-06-30 |  | 35% | 122.07d | 0d |  |
