# caarray_schedule_2_1_0

Schedule from MS Project, 2008-05-27 to 2008-07-31.
Sony Electronics, Inc.

## Calendars

- Standard: Mon-Fri 08:00-12:00, 13:00-17:00; Sat-Sun off.

## Resources

| Resource |
| --- |
| slustbader |
| mshe |
| mshestopalov |
| wcheng |
| etavela |
| dkokotov |
| keener |
| jgills |
| reddya |
| bmason |
| rsrinivasa |
| misquitt |
| jhadfield |
| hadfieldj |
| klemmj |

## Schedule

| ID | WBS | Task | Duration | Start | Finish | Predecessors | Total slack | Free slack | Constraint | Resources | Work |
| --- | --- | --- | --- | --- | --- | --- | --- | --- | --- | --- | --- |
| 1 | 1 | **Construction alpha3** | 20d? | 2008-05-27 | 2008-06-23 |  | 2.75d |  |  |  | 528h |
| 2 | 1.1 | Project Management | 1d? | 2008-05-27 | 2008-05-27 |  | 48d |  |  |  |  |
| 3 | 1.2 | Requirements Management | 1d? | 2008-05-27 | 2008-05-27 |  | 48d |  |  |  |  |
| 4 | 1.3 | Implementation | 8.25d | 2008-05-29 | 2008-06-10 |  | 0d |  | finish no earlier than 2008-06-10 | slustbader; mshestopalov; jgills; dkokotov | 264h |
| 5 | 1.4 | **Test** | 9d | 2008-06-11 | 2008-06-23 | 4 | 29d |  |  |  | 264h |
| 6 | 1.4.1 | Test on DEV | 1d | 2008-06-11 | 2008-06-11 |  | 29d | 0d |  | slustbader; mshestopalov; jgills; dkokotov; bmason; rsrinivasa | 48h |
| 7 | 1.4.2 | Verify Defects | 5d | 2008-06-12 | 2008-06-18 | 6 | 29d | 0d | start no earlier than 2008-06-12 | keener; bmason; rsrinivasa | 120h |
| 8 | 1.4.3 | Regression Test | 2d | 2008-06-12 | 2008-06-13 | 6 | 32d | 3d | start no earlier than 2008-06-12 | reddya | 16h |
| 9 | 1.4.4 | Deploy to Stage | 1d | 2008-06-19 | 2008-06-19 | 7, 8 | 29d | 0d | start no earlier than 2008-06-16 |  |  |
| 10 | 1.4.5 | Stage Test | 2d | 2008-06-20 | 2008-06-23 | 9 | 29d |  | start no earlier than 2008-06-20 | keener; bmason; rsrinivasa; misquitt; reddya | 80h |
| 11 | 2 | **Construction alpha4 (model lock down)** | 31d? | 2008-05-27 | 2008-07-08 |  | 11d |  |  |  | 624h |
| 12 | 2.1 | Project Management | 1d? | 2008-05-27 | 2008-05-27 |  | 48d |  |  |  |  |
| 13 | 2.2 | Requirements Management | 2d | 2008-05-27 | 2008-05-28 |  | 47d |  |  |  |  |
| 14 | 2.3 | Implementation | 10d | 2008-06-11 | 2008-06-24 | 4 | 0d |  |  | slustbader; mshestopalov; jgills; dkokotov | 320h |
| 15 | 2.4 | **Test** | 10d? | 2008-06-25 | 2008-07-08 | 14 | 17d |  |  |  | 304h |
| 16 | 2.4.1 | Test on DEV | 1d? | 2008-06-25 | 2008-06-25 |  | 18d | 0d |  | slustbader; mshestopalov; jgills; dkokotov; bmason; rsrinivasa | 48h |
| 17 | 2.4.2 | Verify Defects | 4d | 2008-06-26 | 2008-07-01 | 16 | 18d | 0d | finish no earlier than 2008-07-01 | keener; bmason; rsrinivasa; misquitt; reddya | 160h |
| 18 | 2.4.3 | Regression Test | 2d | 2008-06-25 | 2008-06-26 |  | 26d |  |  | reddya | 16h |
| 19 | 2.4.4 | Deploy to Stage | 1d | 2008-07-02 | 2008-07-02 | 17 | 18d | 0d |  |  |  |
| 20 | 2.4.5 | Stage Test | 2d | 2008-07-03 | 2008-07-04 | 19 | 18d | 0d |  | keener; bmason; rsrinivasa; misquitt; reddya | 80h |
| 21 | 2.4.6 | Prod Deployment Test | 4d | 2008-07-03 | 2008-07-08 | 19 | 18d |  |  |  |  |
| 22 | 3 | **Construction RC (feature lock down)** | 48d? | 2008-05-27 | 2008-07-31 |  | 0d |  |  |  |  |
| 23 | 3.1 | Project Management | 1d? | 2008-05-27 | 2008-05-27 |  | 48d |  |  |  |  |
| 24 | 3.2 | Requirements Management | 1d? | 2008-05-27 | 2008-05-27 |  | 48d |  |  |  |  |

| ID | WBS | Task | Duration | Start | Finish | Predecessors | Total slack | Free slack | Constraint | Resources | Work |
| --- | --- | --- | --- | --- | --- | --- | --- | --- | --- | --- | --- |
| 25 | 3.3 | **Design** | 27d | 2008-06-25 | 2008-07-31 |  | 0d |  |  |  |  |
| 26 | 3.3.1 | Final update to the model | 2d | 2008-06-25 | 2008-06-26 | 14 | 0d |  |  |  |  |
| 27 | 3.3.2 | Register model on caDSR | 25d | 2008-06-27 | 2008-07-31 | 26 | 0d |  |  |  |  |
| 28 | 3.4 | Implementation | 9d? | 2008-06-25 | 2008-07-07 | 14 | 2d | 0d | finish no earlier than 2008-07-07 |  |  |
| 29 | 3.5 | **Test** | 6d | 2008-07-08 | 2008-07-15 | 28 | 13d |  |  |  |  |
| 30 | 3.5.1 | Test on DEV | 1d | 2008-07-08 | 2008-07-08 |  | 13d | 0d |  |  |  |
| 31 | 3.5.2 | Verify Defects | 2d | 2008-07-09 | 2008-07-10 | 30 | 13d | 0d | start no earlier than 2008-07-07 |  |  |
| 32 | 3.5.3 | Regression Test | 2d | 2008-07-09 | 2008-07-10 | 30 | 13d | 0d | start no earlier than 2008-07-07 |  |  |
| 33 | 3.5.4 | Installer Test | 2d | 2008-07-11 | 2008-07-14 | 31, 32 | 14d |  |  |  |  |
| 34 | 3.5.5 | Deploy to Stage | 1d | 2008-07-11 | 2008-07-11 | 31, 32 | 13d | 0d |  |  |  |
| 35 | 3.5.6 | Stage Test | 2d | 2008-07-14 | 2008-07-15 | 34 | 13d |  |  |  |  |
| 36 | 4 | **Construction RC2** | 26d? | 2008-06-25 | 2008-07-30 | 14 | 1d |  |  |  | 648h |
| 37 | 4.1 | Project Management | 1d? | 2008-06-25 | 2008-06-25 |  | 27d |  |  |  |  |
| 38 | 4.2 | Requirements Management | 2d | 2008-06-25 | 2008-06-26 |  | 26d |  |  |  |  |
| 39 | 4.3 | **Design** | 4d | 2008-07-08 | 2008-07-11 |  | 15d |  |  |  | 32h |
| 40 | 4.3.1 | Update SAD | 4d | 2008-07-08 | 2008-07-11 | 28 | 15d |  |  | dkokotov | 32h |
| 41 | 4.4 | Implementation | 5d | 2008-07-09 | 2008-07-15 | 28 | 1d | 0d | finish no earlier than 2008-07-15 | slustbader; mshestopalov; jgills; dkokotov | 160h |
| 42 | 4.5 | **Test** | 6d | 2008-07-16 | 2008-07-23 | 41 | 2d |  |  |  | 224h |
| 43 | 4.5.1 | Verify Defects | 3d | 2008-07-16 | 2008-07-18 |  | 2d | 0d |  | keener; bmason; rsrinivasa; misquitt; reddya | 120h |
| 44 | 4.5.2 | Regression Test | 2d | 2008-07-16 | 2008-07-17 |  | 3d | 1d |  | reddya | 16h |
| 45 | 4.5.3 | Deploy to Stage | 1d | 2008-07-21 | 2008-07-21 | 43, 44 | 2d | 0d |  |  |  |
| 46 | 4.5.4 | Stage Test | 2d | 2008-07-22 | 2008-07-23 | 45 | 2d | 0d |  | bmason; rsrinivasa; misquitt; reddya | 64h |
| 47 | 4.5.5 | Installer Test | 3d | 2008-07-21 | 2008-07-23 | 43, 44 | 5d | 0d |  | keener | 24h |
| 48 | 4.6 | **Configuration and Change Management** | 26d | 2008-06-25 | 2008-07-30 |  | 1d | 0d |  |  | 232h |
| 49 | 4.6.1 | Prepare Release Note | 1d | 2008-07-24 | 2008-07-24 | 46 | 5d |  |  |  |  |

| ID | WBS | Task | Duration | Start | Finish | Predecessors | Total slack | Free slack | Resources | Work |
| --- | --- | --- | --- | --- | --- | --- | --- | --- | --- | --- |
| 50 | 4.6.2 | **Documentation** | 26d | 2008-06-25 | 2008-07-30 |  | 1d |  |  | 232h |
| 51 | 4.6.2.1 | Draft Update User Guide | 4d | 2008-07-16 | 2008-07-21 | 41 | 1d | 0d | hadfieldj | 32h |
| 52 | 4.6.2.2 | Review User Guide | 4d | 2008-07-22 | 2008-07-25 | 51 | 1d | 0d | klemmj; rsrinivasa | 64h |
| 53 | 4.6.2.3 | Complete User Guide | 3d | 2008-07-28 | 2008-07-30 | 52 | 1d |  | hadfieldj | 24h |
| 54 | 4.6.2.4 | Update Technical Guide | 3d | 2008-06-25 | 2008-06-27 | 14 | 25d |  | slustbader; mshestopalov; jgills; dkokotov | 96h |
| 55 | 4.6.2.5 | Update Online Help | 2d | 2008-07-07 | 2008-07-08 | 20 | 18d |  | hadfieldj | 16h |
| 56 | 4.6.2.6 | Update Installation Guide | 5d | 2008-06-25 | 2008-07-01 |  | 23d |  |  |  |
| 57 | 4.6.3 | Update gForge | 1d | 2008-07-24 | 2008-07-24 | 47 | 5d |  |  |  |
| 58 | 4.6.4 | Update Download Center | 4d | 2008-07-24 | 2008-07-29 | 46 | 2d |  |  |  |
| 59 | 4.6.5 | Update Tools/Landing Site | 2d | 2008-07-24 | 2008-07-25 | 46 | 4d |  |  |  |
| 60 | 4.7 | **Environment** | 1d | 2008-07-30 | 2008-07-30 | 47 | 1d |  |  |  |
| 61 | 4.7.1 | Deploy to Prod | 1d | 2008-07-30 | 2008-07-30 | 48FF | 1d |  |  |  |
