# caarray_schedule_2_1_1

Schedule from MS Project, 2008-08-01 to 2008-10-15, A marks actual dates.
Sony Electronics, Inc.

## Calendars

- Standard: Mon-Fri 08:00-12:00, 13:00-17:00; Sat-Sun off.

## Resources

| Resource |
| --- |
| rsrinivasa |
| hadfieldj |
| klemmj |
| slustbader |
| dkokotov |
| mshestopalov |
| jgill |
| misquitta |
| reedya |
| keener |
| reddya |
| systems |
| duncanmk |
| kc |
| dba |
| dharley |
| bmason |

## Schedule

| ID | WBS | Task | Type | Duration | Start | Finish | Predecessors | Complete | Remaining | Total slack | Free slack | Constraint | Resources | Work | Actual work |
| --- | --- | --- | --- | --- | --- | --- | --- | --- | --- | --- | --- | --- | --- | --- | --- |
| 1 | 1 | Milestone: Begin 2.1.1 Release | milestone | 0d | 2008-08-01 | 2008-08-01 |  |  |  | 58d | 0d |  |  |  |  |
| 2 | 2 | **Construction RC** |  | 31d? | 2008-08-01 A | 2008-09-12 |  | 78% | 6.74d? | 22.5d |  |  |  | 1056h | 920h |
| 3 | 2.1 | Milestone: Begin RC Construction | milestone | 0d | 2008-08-01 | 2008-08-01 | 1 |  |  | 52.5d | 0d |  |  |  |  |
| 4 | 2.2 | Project Management |  | 1d? | 2008-08-01 | 2008-08-01 | 3 |  |  | 52.5d |  |  |  |  |  |
| 5 | 2.3 | Requirements Management |  | 1d? | 2008-08-01 A | 2008-08-01 A | 3 | 100% |  |  |  |  | rsrinivasa | 8h | 8h |
| 6 | 2.4 | **Implementation** |  | 21d? | 2008-08-01 A | 2008-08-30 |  | 99% | 0d? | 32.5d |  |  |  | 704h | 704h |
| 7 | 2.4.1 | Milestone: Begin Implementation of RC | milestone | 0d | 2008-08-01 | 2008-08-01 | 3 |  |  | 53.5d |  |  |  |  |  |
| 8 | 2.4.2 | Develop RC release |  | 21d? | 2008-08-01 A | 2008-08-30 A | 7 | 100% |  |  |  | finish no earlier than 2008-08-30 | slustbader; dkokotov; mshestopalov; jgill | 672h | 672h |
| 9 | 2.4.3 | Verify Defects on DEV |  | 1d? | 2008-08-28 A | 2008-08-28 A | 3 | 100% |  |  |  | start no earlier than 2008-08-28 | slustbader; dkokotov; mshestopalov; jgill | 32h | 32h |
| 10 | 2.4.4 | Milestone: Deploy RC to QA | milestone | 0d | 2008-08-30 | 2008-08-30 | 8, 9 |  |  | 0d |  |  |  |  |  |
| 11 | 2.5 | **Test** |  | 10d | 2008-08-30 A | 2008-09-12 |  | 59% | 4.09d | 22.5d |  |  |  | 344h | 208h |
| 12 | 2.5.1 | Milestone: Begin RC1 Testing | milestone | 0d | 2008-08-30 | 2008-08-30 | 10 |  |  | 32.5d |  |  |  |  |  |
| 13 | 2.5.2 | Verify Defects on QA |  | 4d | 2008-09-01 A | 2008-09-04 A | 12 | 100% |  |  |  |  | misquitta; reddya; keener | 96h | 96h |
| 14 | 2.5.3 | Regression Test |  | 5d | 2008-09-01 A | 2008-09-05 A | 12 | 100% |  |  |  |  | misquitta; reddya | 80h | 80h |
| 15 | 2.5.4 | Deploy to Stage |  | 1d | 2008-09-08 | 2008-09-08 | 13, 14 |  |  | 22.5d | 0d |  | systems | 8h |  |
| 16 | 2.5.5 | Stage Test |  | 4d | 2008-09-09 | 2008-09-12 | 15 |  |  | 22.5d | 0d |  | misquitta; reddya; keener | 96h |  |
| 17 | 2.5.6 | Installer Test |  | 4d | 2008-09-08 A | 2008-09-11 A | 13, 14 | 100% |  |  |  |  | keener | 32h | 32h |
| 18 | 2.5.7 | Security Scan |  | 4d | 2008-09-09 | 2008-09-12 | 15 |  |  | 22.5d | 0d |  | systems | 32h |  |
| 19 | 2.5.8 | Milestone: RC testing complete | milestone | 0d | 2008-09-12 | 2008-09-12 | 16, 17, 18 |  |  | 22.5d | 0d |  |  |  |  |
| 20 | 2.6 | Milestone: RC Completed | milestone | 0d | 2008-09-12 | 2008-09-12 | 19 |  |  | 22.5d |  |  |  |  |  |
| 21 | 3 | **Construction RC2** |  | 38.5d? | 2008-08-01 A | 2008-09-24 |  | 76% | 9.24d? | 15d |  |  |  | 508h | 380h |
| 22 | 3.1 | Milestone: Begin RC2 Construction | milestone | 0d | 2008-08-30 | 2008-08-30 | 10 |  |  | 37.5d |  |  |  |  |  |
| 23 | 3.2 | Project Management |  | 1d? | 2008-08-01 | 2008-08-01 |  |  |  | 57.5d |  |  | duncanmk | 8h |  |
| 24 | 3.3 | **Implementation** |  | 5d | 2008-08-30 A | 2008-09-05 A |  | 100% |  |  |  |  |  | 88h | 88h |
| 25 | 3.3.1 | Milestone: Begin RC2 Implementation | milestone | 0d | 2008-08-30 A | 2008-08-30 A | 10 | 100% |  |  |  |  |  |  |  |
| 26 | 3.3.2 | Address RC2 bugs |  | 5d | 2008-09-01 A | 2008-09-05 A |  | 100% |  |  |  | start no earlier than 2008-09-01 | slustbader; dkokotov | 80h | 80h |
| 27 | 3.3.3 | Verify Defects on DEV |  | 0.5d | 2008-09-05 A | 2008-09-05 A | 26 | 100% |  |  |  |  | slustbader; dkokotov | 8h | 8h |
| 28 | 3.3.4 | Milestone: Deploy RC2 to QA | milestone | 0d | 2008-09-05 A | 2008-09-05 A | 27 | 100% |  |  |  |  |  |  |  |

| ID | WBS | Task | Type | Duration | Start | Finish | Predecessors | Complete | Remaining | Total slack | Free slack | Resources | Work | Actual work |
| --- | --- | --- | --- | --- | --- | --- | --- | --- | --- | --- | --- | --- | --- | --- |
| 29 | 3.4 | **Test** |  | 13d | 2008-09-05 A | 2008-09-24 |  | 73% | 3.51d | 20d |  |  | 412h | 292h |
| 30 | 3.4.1 | Milestone: Begin RC2 Testing | milestone | 0d | 2008-09-05 | 2008-09-05 | 28 |  |  | 33d |  |  |  |  |
| 31 | 3.4.2 | Verify Defects on QA |  | 5d | 2008-09-05 A | 2008-09-12 A | 30 | 100% |  |  |  | misquitta; reddya; keener | 120h | 120h |
| 32 | 3.4.3 | Regression Test |  | 3d | 2008-09-05 A | 2008-09-10 A | 30 | 100% |  |  |  | misquitta; reddya | 48h | 48h |
| 33 | 3.4.4 | Deploy to Stage -> QA-VM |  | 0.5d | 2008-09-17 A | 2008-09-17 A | 31 | 100% |  |  |  | systems | 4h | 4h |
| 34 | 3.4.5 | Stage Test -> QA-VM |  | 5d | 2008-09-17 | 2008-09-24 | 33 |  |  | 20d | 0d | misquitta; reddya; keener | 120h |  |
| 35 | 3.4.6 | Installer Testing |  | 3d | 2008-09-05 A | 2008-09-10 A | 30 | 100% |  |  |  | keener | 24h | 24h |
| 36 | 3.4.7 | Deployment Test |  | 2d | 2008-09-15 A | 2008-09-16 A | 33 | 100% |  |  |  | dba; systems; slustbader; dkokotov; misquitta; reddya | 96h | 96h |
| 37 | 3.4.8 | Milestone: RC2 testing completed | milestone | 0d | 2008-09-24 | 2008-09-24 | 34, 35, 36 |  |  | 20d | 0d |  |  |  |
| 38 | 3.5 | Milestone: RC2 Completed | milestone | 0d | 2008-09-24 | 2008-09-24 | 37 |  |  | 20d |  |  |  |  |
| 39 | 4 | **Construction RC3** |  | 17.5d? | 2008-09-05 A | 2008-09-30 |  | 22% | 13.72d? | 10.5d |  |  | 716h | 196h |
| 40 | 4.1 | Milestone: Begin RC3 Construction | milestone | 0d | 2008-09-05 | 2008-09-05 | 28 |  |  | 3d | 0d |  |  |  |
| 41 | 4.2 | Project Management |  | 1d? | 2008-09-05 | 2008-09-08 | 40 |  |  | 32d |  | duncanmk | 8h |  |
| 42 | 4.3 | **Implementation** |  | 8.5d | 2008-09-05 A | 2008-09-18 A |  | 100% |  |  |  |  | 196h | 196h |
| 43 | 4.3.1 | Milestone: Begin RC3 Implementation | milestone | 0d | 2008-09-05 A | 2008-09-05 A | 40 | 100% |  |  |  |  |  |  |
| 44 | 4.3.2 | Address RC3 bugs |  | 7.5d | 2008-09-05 A | 2008-09-16 A | 43 | 100% |  |  |  | slustbader; dkokotov; dharley | 180h | 180h |
| 45 | 4.3.3 | Verify Defects on DEV |  | 0.5d | 2008-09-17 A | 2008-09-17 A | 44 | 100% |  |  |  | slustbader; dkokotov; dharley; bmason | 16h | 16h |
| 46 | 4.3.4 | Milestone: Deploy RC3 to QA | milestone | 0d | 2008-09-18 A | 2008-09-18 A | 45 | 100% |  |  |  |  |  |  |
| 47 | 4.4 | **Test** |  | 9d | 2008-09-18 | 2008-09-30 |  |  |  | 0d |  |  | 512h |  |
| 48 | 4.4.1 | Milestone: Begin RC3 Testing | milestone | 0d | 2008-09-18 | 2008-09-18 | 46 |  |  | 0d |  |  |  |  |
| 49 | 4.4.2 | Verify Defects on QA |  | 4d | 2008-09-18 | 2008-09-23 | 48 |  |  | 0d |  | misquitta; reddya; keener | 96h |  |
| 50 | 4.4.3 | Regression Test on QA |  | 4d | 2008-09-18 | 2008-09-23 | 48 |  |  | 0d |  | misquitta; reddya | 64h |  |
| 51 | 4.4.4 | Deploy to Stage |  | 1d | 2008-09-24 | 2008-09-24 | 49 |  |  | 15.5d | 0d | systems | 8h |  |
| 52 | 4.4.5 | Stage Test |  | 4d | 2008-09-25 | 2008-09-30 | 51 |  |  | 15.5d | 0d | misquitta; reddya; keener | 96h |  |
| 53 | 4.4.6 | Installer Testing |  | 3d | 2008-09-24 | 2008-09-26 | 49, 50 |  |  | 6d | 0d | keener | 24h |  |
| 54 | 4.4.7 | Installer Testing - kc |  | 3d | 2008-09-24 | 2008-09-26 | 49, 50 |  |  | 6d | 0d | kc | 24h |  |
| 55 | 4.4.8 | LSD compliance testing |  | 3d | 2008-09-24 | 2008-09-26 | 49, 50 |  |  | 17.5d | 2d | misquitta; reddya; keener | 72h |  |
| 56 | 4.4.9 | Deployment Test |  | 2d | 2008-09-18 | 2008-09-19 | 46 |  |  | 22.5d |  | dba; systems; slustbader; dkokotov; misquitta; reddya | 96h |  |
| 57 | 4.4.10 | Security Scan |  | 4d | 2008-09-25 | 2008-09-30 | 51 |  |  | 15.5d | 0d | systems | 32h |  |
| 58 | 4.4.11 | Milestone: RC3 testing completed | milestone | 0d | 2008-09-30 | 2008-09-30 | 52, 53, 54, 55, 57 |  |  | 15.5d | 0d |  |  |  |
| 59 | 4.5 | Milestone: RC3 Completed | milestone | 0d | 2008-09-30 | 2008-09-30 | 58 |  |  | 15.5d |  |  |  |  |

| ID | WBS | Task | Type | Duration | Start | Finish | Predecessors | Complete | Remaining | Total slack | Free slack | Constraint | Resources | Work | Actual work |
| --- | --- | --- | --- | --- | --- | --- | --- | --- | --- | --- | --- | --- | --- | --- | --- |
| 60 | 5 | **Construction RC4 - GA** |  | 12d | 2008-09-23 | 2008-10-09 |  |  |  | 0d |  |  |  | 460h |  |
| 61 | 5.1 | Milestone:Begin RC4 Construction | milestone | 0d | 2008-09-23 | 2008-09-23 | 49, 50 |  |  | 0d |  |  |  |  |  |
| 62 | 5.2 | **Implementation** |  | 5.5d | 2008-09-23 | 2008-10-01 |  |  |  | 0d |  |  |  | 136h |  |
| 63 | 5.2.1 | Milestone: Begin RC4 Implementation | milestone | 0d | 2008-09-23 | 2008-09-23 | 61 |  |  | 0d |  |  |  |  |  |
| 64 | 5.2.2 | Address RC4 bugs |  | 5d | 2008-09-24 | 2008-09-30 | 63 |  |  | 0d |  |  | slustbader; dkokotov; dharley | 120h |  |
| 65 | 5.2.3 | Verify Defects on DEV |  | 0.5d | 2008-10-01 | 2008-10-01 | 64 |  |  | 0d |  |  | slustbader; dkokotov; dharley; bmason | 16h |  |
| 66 | 5.2.4 | Milestone: Deploy RC4 to QA | milestone | 0d | 2008-10-01 | 2008-10-01 | 65 |  |  | 0d |  |  |  |  |  |
| 67 | 5.3 | **Test** |  | 6.5d | 2008-10-01 | 2008-10-09 |  |  |  | 0d |  |  |  | 324h |  |
| 68 | 5.3.1 | Milestone: Begin RC4 Testing | milestone | 0d | 2008-10-01 | 2008-10-01 | 66 |  |  | 0d |  |  |  |  |  |
| 69 | 5.3.2 | Verify Defects on QA |  | 2d | 2008-10-01 | 2008-10-03 | 68 |  |  | 0d |  |  | misquitta; reddya; keener | 48h |  |
| 70 | 5.3.3 | Regression Test |  | 3d | 2008-10-01 | 2008-10-06 | 68 |  |  | 3.5d | 0d |  | misquitta; reddya | 48h |  |
| 71 | 5.3.4 | Deploy to Stage |  | 0.5d | 2008-10-03 | 2008-10-03 | 69 |  |  | 0d |  |  | systems | 4h |  |
| 72 | 5.3.5 | Stage Test |  | 3d | 2008-10-06 | 2008-10-08 | 71 |  |  | 4d | 0d |  | misquitta; reddya; keener | 72h |  |
| 73 | 5.3.6 | Installer Testing |  | 3d | 2008-10-06 | 2008-10-09 | 69, 70 |  |  | 4.5d | 0d |  | keener | 24h |  |
| 74 | 5.3.7 | Installer Testing - kc |  | 3d | 2008-10-06 | 2008-10-09 | 69, 70 |  |  | 4.5d | 0d |  | kc | 24h |  |
| 75 | 5.3.8 | LSD compliance testing |  | 3d | 2008-10-06 | 2008-10-09 | 69, 70 |  |  | 4.5d | 0d |  | misquitta; reddya; keener | 72h |  |
| 76 | 5.3.9 | Security scan |  | 4d | 2008-10-06 | 2008-10-09 | 71 |  |  | 0d |  |  | systems | 32h |  |
| 77 | 5.3.10 | Milestone: RC4 Testing completed | milestone | 0d | 2008-10-09 | 2008-10-09 | 72, 73, 74, 76 |  |  | 0d |  | start no earlier than 2008-10-09 |  |  |  |
| 78 | 5.4 | Milestone: RC4 Completed | milestone | 0d | 2008-10-09 | 2008-10-09 | 77 |  |  | 3.5d |  |  |  |  |  |
| 79 | 6 | **Configuration and Change Management** |  | 30d | 2008-08-30 A | 2008-10-10 |  | 24% | 22.69d | 2.5d |  |  |  | 392h | 76h |
| 80 | 6.1 | Milestone: Begin Configuration and Change Mgmt | milestone | 0d | 2008-08-30 | 2008-08-30 | 10 |  |  | 0d |  |  |  |  |  |
| 81 | 6.2 | **Documentation** |  | 27d | 2008-08-30 A | 2008-10-07 | 80 | 38% | 16.74d | 5.5d |  |  |  | 280h | 76h |
| 82 | 6.2.1 | Milestone: Begin Documentation | milestone | 0d | 2008-08-30 | 2008-08-30 | 80 |  |  | 32.5d | 0d |  |  |  |  |
| 83 | 6.2.2 | **Update User Guide** |  | 18d | 2008-08-30 A | 2008-09-24 |  | 53% | 8.5d | 14.5d |  |  |  | 184h | 76h |
| 84 | 6.2.2.1 | Milestone: Begin User Guide Update | milestone | 0d | 2008-08-30 | 2008-08-30 | 82 |  |  | 32.5d |  |  |  |  |  |
| 85 | 6.2.2.2 | GUI change summary to Jill |  | 5d | 2008-09-01 A | 2008-09-05 A | 84 | 100% |  |  |  |  | rsrinivasa | 40h | 40h |
| 86 | 6.2.2.3 | Update User Guide and Help Text |  | 5d | 2008-09-08 A | 2008-09-12 | 85 | 90% | 0.5d | 13.5d | 0d |  | hadfieldj | 40h | 36h |
| 87 | 6.2.2.4 | Review User Guide and Help Text |  | 5d | 2008-09-15 | 2008-09-19 | 86 |  |  | 15d | 0d |  | klemmj; rsrinivasa | 80h |  |
| 88 | 6.2.2.5 | Incorporate feedback to User Guide |  | 3d | 2008-09-22 | 2008-09-24 | 87 |  |  | 15d | 0d |  | hadfieldj | 24h |  |
| 89 | 6.2.2.6 | Milestone: User Guide Updated for 2.1.1 | milestone | 0d | 2008-09-24 | 2008-09-24 | 88 |  |  | 13.5d | 9d |  |  |  |  |

| ID | WBS | Task | Type | Duration | Start | Finish | Predecessors | Total slack | Free slack | Resources | Work |
| --- | --- | --- | --- | --- | --- | --- | --- | --- | --- | --- | --- |
| 90 | 6.2.3 | **Update Install Guide** |  | 19.5d | 2008-09-10 | 2008-10-07 |  | 5.5d |  |  | 96h |
| 91 | 6.2.3.1 | Milestone: Begin Install Guide Update | milestone | 0d | 2008-09-10 | 2008-09-10 | 35 | 25d |  |  |  |
| 92 | 6.2.3.2 | Send install guide update to Jill: RC3 |  | 3d | 2008-09-29 | 2008-10-01 | 53, 54 | 6d | 0d | keener; kc | 48h |
| 93 | 6.2.3.3 | Update Install Guide: RC3 |  | 3d | 2008-10-02 | 2008-10-06 | 92 | 6d | 0d | hadfieldj | 24h |
| 94 | 6.2.3.4 | Review install guide |  | 1d | 2008-10-07 | 2008-10-07 | 93 | 6d | 0d | keener; kc; dharley | 24h |
| 95 | 6.2.3.5 | Milestone: Complete Install Guide | milestone | 0d | 2008-10-07 | 2008-10-07 | 94 | 4.5d | 0d |  |  |
| 96 | 6.2.4 | Milestone: Complete Documentation | milestone | 0d | 2008-10-07 | 2008-10-07 | 89, 95 | 4.5d | 0d |  |  |
| 97 | 6.3 | **Upload release artifacts** |  | 4.5d | 2008-10-06 | 2008-10-10 |  | 2.5d |  |  | 112h |
| 98 | 6.3.1 | Milestone: Begin preparation of release artifacts | milestone | 0d | 2008-10-06 | 2008-10-06 | 70 | 6.5d | 0d |  |  |
| 99 | 6.3.2 | Prepare 2.1.1 Release Note |  | 2d | 2008-10-06 | 2008-10-08 | 98 | 6.5d | 3d | duncanmk | 16h |
| 100 | 6.3.3 | Prepare 2.1.1 client.jar |  | 1d | 2008-10-09 | 2008-10-10 | 72, 73, 74 | 4.5d | 1d | slustbader | 8h |
| 101 | 6.3.4 | Prepare 2.1.1 javadoc |  | 1d | 2008-10-09 | 2008-10-10 | 72, 73, 74 | 4.5d | 1d | slustbader | 8h |
| 102 | 6.3.5 | Upload installer |  | 1d | 2008-10-09 | 2008-10-10 | 73, 74 | 4.5d | 1d | duncanmk | 8h |
| 103 | 6.3.6 | Upload documentation |  | 1d | 2008-10-08 | 2008-10-08 | 96 | 6d | 2.5d | duncanmk | 8h |
| 104 | 6.3.7 | Update Download Center |  | 3d | 2008-10-06 | 2008-10-09 | 69, 70 | 4d | 1.5d | duncanmk | 24h |
| 105 | 6.3.8 | Update Tools Page |  | 2d | 2008-10-09 | 2008-10-10 | 72 | 4d | 0.5d | duncanmk | 16h |
| 106 | 6.3.9 | Update LSD Files Tab |  | 1d | 2008-10-09 | 2008-10-10 | 75 | 4.5d | 1d | duncanmk | 8h |
| 107 | 6.3.10 | Update Landing Site |  | 2d | 2008-10-09 | 2008-10-10 | 72 | 4d | 0.5d | duncanmk | 16h |
| 108 | 6.3.11 | Milestone: Complete release artifact preparation | milestone | 0d | 2008-10-10 | 2008-10-10 | 99, 100, 101, 102, 103, 104, 105, 106, 107 | 2.5d | 0d |  |  |
| 109 | 6.4 | Milestone: Complete Configuration Management | milestone | 0d | 2008-10-10 | 2008-10-10 | 96, 108 | 2.5d |  |  |  |
| 110 | 7 | **Environment** |  | 3.5d | 2008-10-09 | 2008-10-15 |  | 0d |  |  | 100h |
| 111 | 7.1 | Milestone: Begin deployment to PROD activities | milestone | 0d | 2008-10-09 | 2008-10-09 | 77 | 0d |  |  |  |
| 112 | 7.2 | Deploy to PROD |  | 0.5d | 2008-10-10 | 2008-10-10 | 111 | 0d |  | systems | 4h |
| 113 | 7.3 | Verify PROD Deployment |  | 3d | 2008-10-10 | 2008-10-15 | 112 | 0d |  | misquitta; bmason; slustbader; keener | 96h |
| 114 | 7.4 | Milestone: Complete PROD deployment activities | milestone | 0d | 2008-10-15 | 2008-10-15 | 113 | 0d |  |  |  |
| 115 | 8 | Milestone: Complete 2.1.1 | milestone | 0d | 2008-10-15 | 2008-10-15 | 114 | 0d |  |  |  |
