# new_caarray_schedule_2_2_0

Schedule from MS Project, 2008-08-14 to 2009-01-21, A marks actual dates.
Sony Electronics, Inc.

## Calendars

- Standard: Mon-Fri 08:00-12:00, 13:00-17:00; Sat-Sun off. Exceptions (off unless hours are given): 2008-11-11 (Veterans Day), 2008-11-27 to 2008-11-28 (Thanksgiving), 2008-12-24 to 2009-01-02 (Christmas to New Years).

## Resources

| Resource |
| --- |
| rsrinivasa |
| dkokotov |
| klemmj |
| duncanmk |
| slustbader |
| mshestopalov |
| dharley |
| lmisquitta |
| areddy |
| khann |
| tboal |
| jhadfield |

## Schedule

| ID | WBS | Task | Type | Duration | Start | Finish | Predecessors | Complete | Remaining | Total slack | Constraint | Resources | Work | Actual work |
| --- | --- | --- | --- | --- | --- | --- | --- | --- | --- | --- | --- | --- | --- | --- |
| 1 | 1 | **caArray 2.2.0** |  | 104d | 2008-08-14 A | 2009-01-21 |  | 99% | 1.21d | 0d |  |  | 1988.6h | 1988.6h |
| 2 | 1.1 | **Inception and Elaboration** |  | 20d | 2008-08-14 A | 2008-09-10 A |  | 100% |  |  |  |  | 340.6h | 340.6h |
| 3 | 1.1.1 | Milestone: Begin Inception/Elaboration | milestone | 0d | 2008-08-14 A | 2008-08-14 A |  | 100% |  |  |  |  |  |  |
| 4 | 1.1.2 | **Requirements** |  | 20d | 2008-08-14 A | 2008-09-10 A |  | 100% |  |  |  |  | 320h | 320h |
| 5 | 1.1.2.1 | Design and Document Use cases |  | 20d | 2008-08-14 A | 2008-09-10 A | 3 | 100% |  |  |  | rsrinivasa [50%]; klemmj [50%]; duncanmk [50%]; dkokotov [50%] | 320h | 320h |
| 6 | 1.1.3 | **Project Management** |  | 3d | 2008-09-01 A | 2008-09-04 A |  | 100% |  |  |  |  | 20.6h | 20.6h |
| 7 | 1.1.3.1 | Estimate LOEs |  | 2d | 2008-09-01 A | 2008-09-03 A |  | 100% |  |  |  | dkokotov | 11h | 11h |
| 8 | 1.1.3.2 | Define release scope |  | 1d | 2008-09-04 A | 2008-09-04 A | 7 | 100% |  |  |  | klemmj [30%]; duncanmk [30%]; rsrinivasa [30%]; dkokotov [30%] | 9.6h | 9.6h |
| 9 | 1.1.4 | Milestone: Complete Inception/Elaboration | milestone | 0d | 2008-09-10 A | 2008-09-10 A | 5, 8 | 100% |  |  |  |  |  |  |
| 10 | 1.2 | **Construction Alpha1** |  | 55d | 2008-09-10 A | 2008-12-01 A | 9 | 100% |  |  |  |  | 1128h | 1128h |
| 11 | 1.2.1 | Milestone: Begin Alpha1 Construction | milestone | 0d | 2008-09-10 A | 2008-09-10 A | 8 | 100% |  |  |  |  |  |  |
| 12 | 1.2.2 | **Implementation** |  | 33.67d | 2008-09-15 A | 2008-10-30 A |  | 100% |  |  |  |  | 912h | 912h |
| 13 | 1.2.2.1 | Develop alpha1 features and defects |  | 30d | 2008-09-15 A | 2008-10-27 A | 9 | 100% |  |  | finish no earlier than 2008-10-28 | dkokotov [50%]; slustbader; mshestopalov; dharley; rsrinivasa [30%] | 912h | 912h |
| 14 | 1.2.2.2 | Verify Defects on DEV |  | 1d | 2008-10-27 A | 2008-10-28 A | 13 | 100% |  |  |  |  |  |  |
| 15 | 1.2.2.3 | Milestone: Deploy Alpha1 to QA | milestone | 1d | 2008-10-29 A | 2008-10-30 A | 14 | 100% |  |  |  |  |  |  |
| 16 | 1.2.3 | **Test** |  | 19d | 2008-10-31 A | 2008-12-01 A | 15 | 100% |  |  |  |  | 216h | 216h |
| 17 | 1.2.3.1 | Verify new features and defects on QA |  | 10d | 2008-10-31 A | 2008-11-14 A | 15 | 100% |  |  |  | lmisquitta [80%] | 64h | 64h |
| 18 | 1.2.3.2 | Regression Test on QA |  | 10d | 2008-10-31 A | 2008-11-14 A | 15 | 100% |  |  |  | areddy | 80h | 80h |
| 19 | 1.2.3.3 | Deploy to Stage |  | 1d | 2008-11-17 A | 2008-11-17 A | 17, 18 | 100% |  |  |  |  |  |  |
| 20 | 1.2.3.4 | Verify new features and defects on Stage |  | 7d | 2008-11-18 A | 2008-11-26 A | 19 | 100% |  |  |  | lmisquitta [50%] | 28h | 28h |
| 21 | 1.2.3.5 | Regression Test on Stage |  | 5d | 2008-11-18 A | 2008-11-24 A | 19 | 100% |  |  |  | areddy [50%] | 20h | 20h |
| 22 | 1.2.3.6 | Installer Testing |  | 3d | 2008-11-25 A | 2008-12-01 A | 21 | 100% |  |  |  | areddy | 24h | 24h |
| 23 | 1.2.3.7 | Milestone: Alpha1 testing completed | milestone | 0d | 2008-12-01 A | 2008-12-01 A | 20, 22 | 100% |  |  |  |  |  |  |
| 24 | 1.2.4 | Milestone: Complete Alpha1 Construction | milestone | 0d | 2008-12-01 A | 2008-12-01 A | 23 | 100% |  |  |  |  |  |  |

| ID | WBS | Task | Type | Duration | Start | Finish | Predecessors | Complete | Constraint | Resources | Work | Actual work |
| --- | --- | --- | --- | --- | --- | --- | --- | --- | --- | --- | --- | --- |
| 25 | 1.3 | **Construction RC 1** |  | 28d | 2008-10-30 A | 2008-12-12 A | 15 | 100% |  |  | 360h | 360h |
| 26 | 1.3.1 | Milestone: Begin RC1 Construction | milestone | 0d | 2008-10-30 A | 2008-10-30 A | 15 | 100% |  |  |  |  |
| 27 | 1.3.2 | **Implementation** |  | 12d | 2008-10-31 A | 2008-11-18 A |  | 100% |  |  | 280h | 280h |
| 28 | 1.3.2.1 | Develop RC1 features and defects |  | 10d | 2008-10-31 A | 2008-11-14 A | 15 | 100% | finish no earlier than 2008-10-28 | dkokotov [50%]; slustbader; mshestopalov; dharley | 280h | 280h |
| 29 | 1.3.2.2 | Verify Defects on DEV |  | 1d | 2008-11-17 A | 2008-11-17 A | 28 | 100% |  |  |  |  |
| 30 | 1.3.2.3 | Milestone: Deploy RC1 to QA | milestone | 1d | 2008-11-18 A | 2008-11-18 A | 29, 19 | 100% |  |  |  |  |
| 31 | 1.3.3 | **Test** |  | 16d | 2008-11-19 A | 2008-12-12 A | 30 | 100% |  |  | 80h | 80h |
| 32 | 1.3.3.1 | Verify new features and defects on QA |  | 7d | 2008-11-19 A | 2008-12-01 A | 30 | 100% |  | lmisquitta [50%] | 28h | 28h |
| 33 | 1.3.3.2 | Regression Test on QA |  | 7d | 2008-11-19 A | 2008-12-01 A | 30 | 100% |  | areddy [50%] | 28h | 28h |
| 34 | 1.3.3.3 | Deploy to Stage |  | 1d | 2008-12-02 A | 2008-12-02 A | 32, 20, 21, 33 | 100% | start no earlier than 2008-12-01 |  |  |  |
| 35 | 1.3.3.4 | Verify new features and defects on Stage |  | 5d | 2008-12-03 A | 2008-12-09 A | 34 | 100% |  |  |  |  |
| 36 | 1.3.3.5 | Regression Test on Stage |  | 5d | 2008-12-03 A | 2008-12-09 A | 34 | 100% |  |  |  |  |
| 37 | 1.3.3.6 | Installer Testing |  | 3d | 2008-12-10 A | 2008-12-12 A | 30 | 100% |  | areddy | 24h | 24h |
| 38 | 1.3.3.7 | App Scan RC1 |  | 5d | 2008-12-03 A | 2008-12-09 A | 34 | 100% |  |  |  |  |
| 39 | 1.3.3.8 | Milestone: RC1 testing completed | milestone | 0d | 2008-12-12 A | 2008-12-12 A | 37, 38 | 100% |  |  |  |  |
| 40 | 1.3.4 | Milestone: Complete RC1 Construction | milestone | 0d | 2008-12-12 A | 2008-12-12 A | 39 | 100% |  |  |  |  |
| 41 | 1.4 | **Construction RC2** |  | 28d | 2008-11-18 A | 2009-01-09 A | 30 | 100% |  |  |  |  |
| 42 | 1.4.1 | Milestone: Begin RC2 Construction | milestone | 0d | 2008-11-18 A | 2008-11-18 A | 30 | 100% |  |  |  |  |
| 43 | 1.4.2 | **Implementation** |  | 15d | 2008-11-19 A | 2008-12-11 A |  | 100% |  |  |  |  |
| 44 | 1.4.2.1 | Address defects |  | 13d | 2008-11-19 A | 2008-12-09 A | 30 | 100% |  |  |  |  |
| 45 | 1.4.2.2 | Verify Defects on DEV |  | 1d | 2008-12-10 A | 2008-12-10 A | 44 | 100% |  |  |  |  |
| 46 | 1.4.2.3 | Milestone: Deploy RC2 to QA | milestone | 1d | 2008-12-11 A | 2008-12-11 A | 45 | 100% |  |  |  |  |
| 47 | 1.4.3 | **Test** |  | 13d | 2008-12-12 A | 2009-01-09 A | 46 | 100% |  |  |  |  |
| 48 | 1.4.3.1 | Verify defects on QA |  | 8d | 2008-12-12 A | 2008-12-23 A | 46 | 100% |  |  |  |  |
| 49 | 1.4.3.2 | Regression Test on QA |  | 7d | 2008-12-12 A | 2008-12-22 A | 46 | 100% |  |  |  |  |
| 50 | 1.4.3.3 | Deploy to Stage |  | 1d | 2009-01-05 A | 2009-01-05 A | 48, 49 | 100% |  |  |  |  |
| 51 | 1.4.3.4 | Verify defects on Stage |  | 4d | 2009-01-06 A | 2009-01-09 A | 50 | 100% |  |  |  |  |
| 52 | 1.4.3.5 | Regression Test on Stage |  | 4d | 2009-01-06 A | 2009-01-09 A | 50 | 100% |  |  |  |  |
| 53 | 1.4.3.6 | Installer Testing |  | 3d | 2008-12-17 A | 2008-12-19 A | 46 | 100% |  |  |  |  |
| 54 | 1.4.3.7 | Milestone: RC2 testing completed | milestone | 0d | 2009-01-09 A | 2009-01-09 A | 51, 52, 53 | 100% |  |  |  |  |
| 55 | 1.4.4 | Milestone: Complete RC2 Construction | milestone | 0d | 2009-01-09 A | 2009-01-09 A | 54 | 100% |  |  |  |  |

| ID | WBS | Task | Type | Duration | Start | Finish | Predecessors | Complete | Remaining | Total slack | Resources | Work | Actual work |
| --- | --- | --- | --- | --- | --- | --- | --- | --- | --- | --- | --- | --- | --- |
| 56 | 1.5 | **Construction RC3** |  | 19d | 2008-12-11 A | 2009-01-19 A |  | 100% |  |  |  |  |  |
| 57 | 1.5.1 | Milestone: Begin RC3 Construction | milestone | 0d | 2008-12-11 A | 2008-12-11 A | 46 | 100% |  |  |  |  |  |
| 58 | 1.5.2 | **Implementation** |  | 11d | 2008-12-12 A | 2009-01-07 A |  | 100% |  |  |  |  |  |
| 59 | 1.5.2.1 | Develop RC3 defects |  | 10d | 2008-12-12 A | 2009-01-06 A | 57 | 100% |  |  |  |  |  |
| 60 | 1.5.2.2 | Verify Defects on DEV |  | 1d | 2009-01-07 A | 2009-01-07 A | 59 | 100% |  |  |  |  |  |
| 61 | 1.5.2.3 | Milestone: Deploy RC3 to QA | milestone | 0d | 2009-01-07 A | 2009-01-07 A | 60 | 100% |  |  |  |  |  |
| 62 | 1.5.3 | **Test** |  | 8d | 2009-01-08 A | 2009-01-19 A | 61 | 100% |  |  |  |  |  |
| 63 | 1.5.3.1 | Verify defects on QA |  | 3d | 2009-01-08 A | 2009-01-12 A |  | 100% |  |  |  |  |  |
| 64 | 1.5.3.2 | Regression Test on QA |  | 5d | 2009-01-08 A | 2009-01-14 A |  | 100% |  |  |  |  |  |
| 65 | 1.5.3.3 | Deploy to Stage |  | 2d | 2009-01-13 A | 2009-01-14 A | 63 | 100% |  |  |  |  |  |
| 66 | 1.5.3.4 | App Scan |  | 3d | 2009-01-15 A | 2009-01-19 A | 65 | 100% |  |  |  |  |  |
| 67 | 1.5.3.5 | Verify defects on Stage |  | 3d | 2009-01-15 A | 2009-01-19 A | 65 | 100% |  |  |  |  |  |
| 68 | 1.5.3.6 | Regression Test on Stage including Perf testing |  | 3d | 2009-01-15 A | 2009-01-19 A | 65 | 100% |  |  |  |  |  |
| 69 | 1.5.3.7 | Installer Testing |  | 3d | 2009-01-08 A | 2009-01-12 A | 61 | 100% |  |  |  |  |  |
| 70 | 1.5.3.8 | LSD Compliance Testing |  | 2d | 2009-01-13 A | 2009-01-14 A | 69 | 100% |  |  |  |  |  |
| 71 | 1.5.3.9 | Milestone: RC3 testing completed | milestone | 0d | 2009-01-19 A | 2009-01-19 A | 66, 67, 68, 69, 70 | 100% |  |  |  |  |  |
| 72 | 1.5.4 | Milestone: Complete RC3 Construction | milestone | 0d | 2009-01-19 A | 2009-01-19 A | 71 | 100% |  |  |  |  |  |
| 73 | 1.6 | **Transition** |  | 104d | 2008-08-14 A | 2009-01-21 |  | 93% | 7.09d | 0d |  | 160h | 160h |
| 74 | 1.6.1 | **Configuration and Change Management** |  | 104d | 2008-08-14 A | 2009-01-21 |  | 98% | 2.48d | 0d |  | 160h | 160h |
| 75 | 1.6.1.1 | Milestone: Begin Configuration and Change Mgmt | milestone | 0d | 2008-08-14 A | 2008-08-14 A |  | 100% |  |  |  |  |  |
| 76 | 1.6.1.2 | **Documentation** |  | 30d | 2008-11-18 A | 2009-01-13 A |  | 100% |  |  |  | 160h | 160h |
| 77 | 1.6.1.2.1 | Milestone: Begin Documentation | milestone | 0d | 2008-11-18 A | 2008-11-18 A | 30 | 100% |  |  |  |  |  |
| 78 | 1.6.1.2.2 | **Update User Guide** |  | 22d | 2008-11-18 A | 2008-12-22 A |  | 100% |  |  |  | 96h | 96h |
| 79 | 1.6.1.2.2.1 | Milestone: Begin User Guide Update | milestone | 0d | 2008-11-18 A | 2008-11-18 A | 30 | 100% |  |  |  |  |  |
| 80 | 1.6.1.2.2.2 | Send change summary to Jill |  | 2d | 2008-11-19 A | 2008-11-20 A | 30 | 100% |  |  | rsrinivasa | 16h | 16h |
| 81 | 1.6.1.2.2.3 | Update User Guide |  | 10d | 2008-11-21 A | 2008-12-08 A | 80 | 100% |  |  | jhadfield | 80h | 80h |
| 82 | 1.6.1.2.2.4 | Review User Guide |  | 7d | 2008-12-09 A | 2008-12-17 A | 81 | 100% |  |  |  |  |  |
| 83 | 1.6.1.2.2.5 | Incorporate feedback to User Guide |  | 3d | 2008-12-18 A | 2008-12-22 A | 82 | 100% |  |  |  |  |  |
| 84 | 1.6.1.2.2.6 | Milestone: User Guide Updated for 2.1.1 | milestone | 0d | 2008-12-22 A | 2008-12-22 A | 83 | 100% |  |  |  |  |  |

| ID | WBS | Task | Type | Duration | Start | Finish | Predecessors | Complete | Remaining | Total slack | Free slack | Resources | Work | Actual work |
| --- | --- | --- | --- | --- | --- | --- | --- | --- | --- | --- | --- | --- | --- | --- |
| 85 | 1.6.1.2.3 | **Update Install Guide** |  | 15d | 2008-12-11 A | 2009-01-13 A | 46 | 100% |  |  |  |  | 64h | 64h |
| 86 | 1.6.1.2.3.1 | Milestone: Begin Install Guide Update | milestone | 0d | 2008-12-11 A | 2008-12-11 A | 46 | 100% |  |  |  |  |  |  |
| 87 | 1.6.1.2.3.2 | Update BDA wiki page with installer properties |  | 1d | 2008-12-12 A | 2008-12-12 A |  | 100% |  |  |  | dharley | 8h | 8h |
| 88 | 1.6.1.2.3.3 | Send change summary to Jill |  | 2d | 2008-12-12 A | 2008-12-15 A | 46 | 100% |  |  |  | dharley | 16h | 16h |
| 89 | 1.6.1.2.3.4 | Update install guide |  | 5d | 2008-12-22 A | 2009-01-07 A | 53 | 100% |  |  |  | jhadfield | 40h | 40h |
| 90 | 1.6.1.2.3.5 | Get Install Guide reviewed and incorporate changes |  | 4d | 2009-01-08 A | 2009-01-13 A | 89 | 100% |  |  |  |  |  |  |
| 91 | 1.6.1.2.3.6 | Milestone: Complete Install Guide | milestone | 0d | 2009-01-13 A | 2009-01-13 A | 90 | 100% |  |  |  |  |  |  |
| 92 | 1.6.1.2.4 | Milestone: Complete Documentation | milestone | 0d | 2009-01-13 A | 2009-01-13 A | 84, 91 | 100% |  |  |  |  |  |  |
| 93 | 1.6.1.3 | **Upload release artifacts** |  | 10d | 2009-01-07 A | 2009-01-21 |  | 88% | 1.25d | 0d |  |  |  |  |
| 94 | 1.6.1.3.1 | Milestone: Begin preparation of release artifacts | milestone | 0d | 2009-01-07 A | 2009-01-07 A | 61 | 100% |  |  |  |  |  |  |
| 95 | 1.6.1.3.2 | Prepare 2.2.0 Release Notes |  | 1d | 2009-01-08 A | 2009-01-08 A | 61 | 100% |  |  |  |  |  |  |
| 96 | 1.6.1.3.3 | Build release artifacts from tag. |  | 1d | 2009-01-08 A | 2009-01-08 A | 61 | 100% |  |  |  |  |  |  |
| 97 | 1.6.1.3.4 | Prepare caArray Gforge site updates. |  | 1d | 2009-01-20 A | 2009-01-20 A | 92, 71 | 100% |  |  |  |  |  |  |
| 98 | 1.6.1.3.5 | Prepare LSD Gforge site updates. |  | 1d | 2009-01-20 A | 2009-01-20 A | 92, 71 | 100% |  |  |  |  |  |  |
| 99 | 1.6.1.3.6 | Submit request to update Download Center. |  | 1d | 2009-01-20 A | 2009-01-20 A | 92, 71 | 100% |  |  |  |  |  |  |
| 100 | 1.6.1.3.7 | Submit request to update Tools page. |  | 1d | 2009-01-20 A | 2009-01-20 A | 92, 71 | 100% |  |  |  |  |  |  |
| 101 | 1.6.1.3.8 | Submit request to update Product page. |  | 1d | 2009-01-20 A | 2009-01-20 A | 92, 71 | 100% |  |  |  |  |  |  |
| 102 | 1.6.1.3.9 | Milestone: Complete release artifact preparation | milestone | 0d | 2009-01-20 A | 2009-01-20 A | 95, 96, 97, 98, 99, 100, 101 | 100% |  |  |  |  |  |  |
| 103 | 1.6.1.3.10 | Update Gforge (caArray,LSD), Download Center, Tools and Product pages. |  | 1d | 2009-01-21 | 2009-01-21 | 107, 102 |  |  | 0d |  |  |  |  |
| 104 | 1.6.1.4 | Milestone: Complete Configuration Management | milestone | 0d | 2009-01-20 | 2009-01-20 | 102 |  |  | 1d | 0d |  |  |  |
| 105 | 1.6.2 | **Environment** |  | 2d | 2009-01-19 A | 2009-01-21 |  |  | 2d | 0d |  |  |  |  |
| 106 | 1.6.2.1 | Milestone: Begin deployment to PROD activities | milestone | 0d | 2009-01-19 A | 2009-01-19 A | 72 | 100% |  |  |  |  |  |  |
| 107 | 1.6.2.2 | Deploy to PROD |  | 1d | 2009-01-20 | 2009-01-20 | 72 |  |  | 0d |  |  |  |  |
| 108 | 1.6.2.3 | Verify PROD Deployment |  | 1d | 2009-01-21 | 2009-01-21 | 107 |  |  | 0d |  |  |  |  |
| 109 | 1.6.2.4 | Milestone: Complete PROD deployment activities | milestone | 0d | 2009-01-21 | 2009-01-21 | 108 |  |  | 0d |  |  |  |  |
| 110 | 1.6.2.5 | Milestone: Announce 2.2.0 release | milestone | 0d | 2009-01-21 | 2009-01-21 | 104, 109 |  |  | 0d |  |  |  |  |
