# caarray_schedule_2_3_0

Schedule from MS Project, 2008-10-13 to 2009-07-28, A marks actual dates.
5AM Solutions, Inc.

## Calendars

- Standard: Mon-Fri 08:00-12:00, 13:00-17:00; Sat-Sun off.

## Resources

| Resource |
| --- |
| rsrinivasa |
| misquitt |
| khannave |
| dba |
| webapp |
| security |
| qavmbox |
| stagebox |
| reddya |

## Schedule

| ID | WBS | Task | Type | Duration | Start | Finish | Predecessors | Complete | Remaining | Total slack | Constraint | Resources | Work | Actual work |
| --- | --- | --- | --- | --- | --- | --- | --- | --- | --- | --- | --- | --- | --- | --- |
| 1 | 1 | **caArray 2.3.0** |  | 207d | 2008-10-13 A | 2009-07-28 |  | 39% | 125.37d | 0d |  |  | 1760h | 344h |
| 2 | 1.1 | **Inception and Elaboration** |  | 43d | 2008-10-13 A | 2008-12-10 A |  | 100% |  |  |  |  | 344h | 344h |
| 3 | 1.1.1 | Milestone: Begin Inception and Elaboration | milestone | 0d | 2008-10-13 A | 2008-10-13 A |  | 100% |  |  |  |  |  |  |
| 4 | 1.1.2 | **Requirements analysis** |  | 43d | 2008-10-13 A | 2008-12-10 A |  | 100% |  |  |  | rsrinivasa | 344h | 344h |
| 5 | 1.1.2.1 | Use cases |  | 15d | 2008-10-13 A | 2008-10-31 A |  | 100% |  |  |  |  |  |  |
| 6 | 1.1.2.2 | Design new service model and API |  | 15d | 2008-11-03 A | 2008-11-24 A | 5 | 100% |  |  |  |  |  |  |
| 7 | 1.1.2.3 | Internal and external reviews of new service model/API |  | 10d | 2008-11-25 A | 2008-12-10 A | 6 | 100% |  |  |  |  |  |  |
| 8 | 1.1.3 | **Project Management** |  | 43d | 2008-10-13 A | 2008-12-10 A |  | 100% |  |  |  |  |  |  |
| 9 | 1.1.3.1 | Define scope |  | 40d | 2008-10-13 A | 2008-12-10 A |  | 100% |  |  |  |  |  |  |
| 10 | 1.1.3.2 | Estimate LOEs |  | 40d | 2008-10-13 A | 2008-12-10 A |  | 100% |  |  |  |  |  |  |
| 11 | 1.1.4 | Milestone: Complete Inception and Elaboration | milestone | 0d | 2008-12-10 A | 2008-12-10 A | 4, 9, 10 | 100% |  |  |  |  |  |  |
| 12 | 1.2 | **Construction Alpha1** |  | 41d | 2008-12-10 A | 2009-02-05 A |  | 100% |  |  |  |  |  |  |
| 13 | 1.2.1 | Milestone: Begin Alpha1 Construction | milestone | 0d | 2008-12-10 A | 2008-12-10 A | 4 | 100% |  |  |  |  |  |  |
| 14 | 1.2.2 | **Implementation** |  | 35d | 2008-12-16 A | 2009-02-02 A |  | 100% |  |  |  |  |  |  |
| 15 | 1.2.2.1 | Implement Alpha1 items |  | 22d | 2008-12-16 A | 2009-01-28 A | 13 | 100% |  |  | finish no earlier than 2009-01-28 |  |  |  |
| 16 | 1.2.2.2 | Verify Alpha1 items on DEV tier |  | 1d | 2009-01-29 A | 2009-01-29 A | 15 | 100% |  |  |  |  |  |  |
| 17 | 1.2.2.3 | Milestone: Deploy Alpha1 to QA | milestone | 1d | 2009-02-02 A | 2009-02-02 A |  | 100% |  |  | start no earlier than 2009-02-02 |  |  |  |
| 18 | 1.2.3 | **QA Testing** |  | 3d | 2009-02-02 A | 2009-02-05 A | 17 | 100% |  |  |  |  |  |  |
| 19 | 1.2.3.1 | 230A1:Verify new items on QA |  | 3d | 2009-02-03 A | 2009-02-05 A |  | 100% |  |  |  |  |  |  |
| 20 | 1.2.3.2 | 230A1:Regression test on QA |  | 3d | 2009-02-03 A | 2009-02-05 A |  | 100% |  |  |  |  |  |  |
| 21 | 1.2.3.3 | Milestone: Complete Alpha1 QA testing | milestone | 0d | 2009-02-02 A | 2009-02-02 A |  | 100% |  |  |  |  |  |  |
| 22 | 1.2.4 | Milestone: Complete Alpha1 Construction | milestone | 0d | 2009-02-02 A | 2009-02-02 A | 21 | 100% |  |  |  |  |  |  |
| 23 | 1.3 | **Construction Alpha2** |  | 32d | 2009-02-02 A | 2009-03-18 |  | 58% | 13.42d | 94d |  |  | 184h |  |
| 24 | 1.3.1 | Milestone: Begin Alpha2 Construction | milestone | 0d | 2009-02-02 A | 2009-02-02 A | 17 | 100% |  |  |  |  |  |  |

| ID | WBS | Task | Type | Duration | Start | Finish | Predecessors | Complete | Total slack | Free slack | Constraint | Resources | Work |
| --- | --- | --- | --- | --- | --- | --- | --- | --- | --- | --- | --- | --- | --- |
| 25 | 1.3.2 | **Implementation** |  | 18d | 2009-02-09 A | 2009-03-04 A |  | 100% |  |  |  |  |  |
| 26 | 1.3.2.1 | Implement Alpha2 items |  | 17d | 2009-02-09 A | 2009-03-03 A | 24 | 100% |  |  | finish no earlier than 2009-03-03 |  |  |
| 27 | 1.3.2.2 | Verify Alpha2 items on DEV tier |  | 1d | 2009-03-04 A | 2009-03-04 A | 26 | 100% |  |  |  |  |  |
| 28 | 1.3.2.3 | Milestone: Deploy Alpha2 to QA | milestone | 0d | 2009-03-04 A | 2009-03-04 A | 27 | 100% |  |  |  |  |  |
| 29 | 1.3.3 | **QA Testing** |  | 10d | 2009-03-04 | 2009-03-18 | 28 |  | 94d |  |  |  | 184h |
| 30 | 1.3.3.1 | 230A2:Verify new items on QA |  | 10d | 2009-03-05 | 2009-03-18 | 28 |  | 94d |  | finish no earlier than 2009-03-13 | misquitt; reddya | 160h |
| 31 | 1.3.3.2 | 230A2:Regression test on QA |  | 3d | 2009-03-05 | 2009-03-09 | 28 |  | 101d |  |  | khannave | 24h |
| 32 | 1.3.3.3 | Milestone: Complete Alpha2 QA testing | milestone | 0d | 2009-03-04 | 2009-03-04 |  |  | 104d | 0d |  |  |  |
| 33 | 1.3.4 | Milestone: Complete Alpha2 Construction | milestone | 0d | 2009-03-04 | 2009-03-04 | 32 |  | 104d |  |  |  |  |
| 34 | 1.4 | **Construction Alpha3** |  | 25d | 2009-03-04 | 2009-04-08 |  |  | 1d |  |  |  |  |
| 35 | 1.4.1 | Milestone: Begin Alpha3 Construction | milestone | 0d | 2009-03-04 | 2009-03-04 | 28 |  | 1d |  |  |  |  |
| 36 | 1.4.2 | **Implementation** |  | 19d | 2009-03-06 | 2009-04-01 | 35 |  | 0d |  |  |  |  |
| 37 | 1.4.2.1 | Implement Alpha3 items |  | 18d | 2009-03-06 | 2009-03-31 |  |  | 0d |  | finish no earlier than 2009-03-31 |  |  |
| 38 | 1.4.2.2 | Verify Alpha3 items on DEV tier |  | 1d | 2009-04-01 | 2009-04-01 | 37 |  | 0d |  |  |  |  |
| 39 | 1.4.2.3 | Milestone: Deploy Alpha3 to QA | milestone | 0d | 2009-04-01 | 2009-04-01 | 38 |  | 0d |  |  |  |  |
| 40 | 1.4.3 | **QA Testing** |  | 5d | 2009-04-02 | 2009-04-08 | 39 |  | 79d |  |  |  |  |
| 41 | 1.4.3.1 | 230A3:Verify new items on QA |  | 5d | 2009-04-02 | 2009-04-08 |  |  | 79d | 0d |  |  |  |
| 42 | 1.4.3.2 | 230A3:Regression test on QA |  | 3d | 2009-04-02 | 2009-04-06 |  |  | 81d | 2d |  |  |  |
| 43 | 1.4.3.3 | Milestone: Complete Alpha3 QA testing | milestone | 0d | 2009-04-08 | 2009-04-08 | 41, 42 |  | 79d | 0d |  |  |  |
| 44 | 1.4.4 | Milestone: Complete Alpha3 Construction | milestone | 0d | 2009-04-08 | 2009-04-08 | 43 |  | 79d |  |  |  |  |
| 45 | 1.5 | **Construction RC1** |  | 48d | 2009-04-01 | 2009-06-08 |  |  | 0d |  |  |  | 560h |
| 46 | 1.5.1 | Milestone: Begin RC1 Construction | milestone | 0d | 2009-04-01 | 2009-04-01 | 39 |  | 0d |  |  |  |  |
| 47 | 1.5.2 | **Implementation** |  | 22d | 2009-04-02 | 2009-05-01 |  |  | 0d |  |  |  |  |
| 48 | 1.5.2.1 | Implement RC1 items |  | 20d | 2009-04-02 | 2009-04-29 | 46 |  | 0d |  |  |  |  |
| 49 | 1.5.2.2 | Verify RC1 items on DEV tier |  | 1d | 2009-04-30 | 2009-04-30 | 48 |  | 0d |  |  |  |  |
| 50 | 1.5.2.3 | Milestone: Deploy RC1 to QA | milestone | 1d | 2009-05-01 | 2009-05-01 | 49 |  | 0d |  |  |  |  |

| ID | WBS | Task | Type | Duration | Start | Finish | Predecessors | Total slack | Free slack | Resources | Work |
| --- | --- | --- | --- | --- | --- | --- | --- | --- | --- | --- | --- |
| 51 | 1.5.3 | **QA Testing** |  | 26d | 2009-05-04 | 2009-06-08 | 50 | 0d |  |  | 560h |
| 52 | 1.5.3.1 | 230RC1: Verify new items on QA |  | 15d | 2009-05-04 | 2009-05-22 | 50 | 0d |  | misquitt; reddya | 240h |
| 53 | 1.5.3.2 | 230RC1: Regression test on QA |  | 3d | 2009-05-04 | 2009-05-06 |  | 12d | 0d | khannave | 24h |
| 54 | 1.5.3.3 | Deployment test on QA-VM |  | 3d | 2009-05-07 | 2009-05-11 | 53 | 56d |  | qavmbox; webapp; dba | 72h |
| 55 | 1.5.3.4 | Deploy RC1 to STAGE |  | 1d | 2009-05-25 | 2009-05-25 | 52, 53 | 0d |  | webapp; stagebox | 16h |
| 56 | 1.5.3.5 | 230RC1: Verify new items on STAGE |  | 7d | 2009-05-26 | 2009-06-03 | 55 | 0d |  | misquitt | 56h |
| 57 | 1.5.3.6 | 230RC1: Regression test on STAGE |  | 3d | 2009-05-26 | 2009-05-28 | 55 | 9d | 0d | khannave | 24h |
| 58 | 1.5.3.7 | Installer testing |  | 10d | 2009-05-04 | 2009-05-15 |  | 52d |  | reddya | 80h |
| 59 | 1.5.3.8 | App scan on STAGE |  | 3d | 2009-06-04 | 2009-06-08 | 55, 56, 57 | 36d |  | stagebox; security | 48h |
| 60 | 1.5.3.9 | Milestone: Complete RC1 QA testing | milestone | 0d | 2009-05-25 | 2009-05-25 | 55 | 46d | 0d |  |  |
| 61 | 1.5.4 | Milestone: Complete RC1 Construction | milestone | 0d | 2009-05-25 | 2009-05-25 | 60 | 46d |  |  |  |
| 62 | 1.6 | **Construction RC2** |  | 39d | 2009-05-01 | 2009-06-25 |  | 11d |  |  | 312h |
| 63 | 1.6.1 | Milestone: Begin RC2 Construction | milestone | 0d | 2009-05-01 | 2009-05-01 | 50 | 11d | 0d |  |  |
| 64 | 1.6.2 | **Implementation** |  | 12d | 2009-05-04 | 2009-05-19 |  | 11d |  |  |  |
| 65 | 1.6.2.1 | Implement RC2 items |  | 10d | 2009-05-04 | 2009-05-15 | 63 | 11d | 0d |  |  |
| 66 | 1.6.2.2 | Verify RC2 items on DEV tier |  | 1d | 2009-05-18 | 2009-05-18 | 65 | 11d | 0d |  |  |
| 67 | 1.6.2.3 | Milestone: Deploy RC2 to QA | milestone | 1d | 2009-05-19 | 2009-05-19 | 66 | 11d | 0d |  |  |
| 68 | 1.6.3 | **QA Testing** |  | 27d | 2009-05-20 | 2009-06-25 | 67 | 11d |  |  | 312h |
| 69 | 1.6.3.1 | 230RC2: Verify new items on QA |  | 8d | 2009-06-04 | 2009-06-15 | 67, 56 | 0d |  | misquitt | 64h |
| 70 | 1.6.3.2 | 230RC2: Regression test on QA |  | 3d | 2009-05-29 | 2009-06-02 | 67, 57 | 9d |  | khannave | 24h |
| 71 | 1.6.3.3 | Deploy RC2 to STAGE |  | 1d | 2009-06-16 | 2009-06-16 | 69, 70 | 0d |  | stagebox; webapp | 16h |
| 72 | 1.6.3.4 | 230RC2: Verify new items on STAGE |  | 7d | 2009-06-17 | 2009-06-25 | 71 | 0d |  | misquitt | 56h |
| 73 | 1.6.3.5 | 230RC2: Regression test on STAGE |  | 3d | 2009-06-17 | 2009-06-19 | 71 | 6d | 0d | khannave | 24h |
| 74 | 1.6.3.6 | Installer testing |  | 10d | 2009-05-20 | 2009-06-02 | 67 | 40d | 17d | reddya | 80h |
| 75 | 1.6.3.7 | App scan on STAGE |  | 3d | 2009-06-17 | 2009-06-19 | 71 | 27d | 4d | stagebox; security | 48h |
| 76 | 1.6.3.8 | Milestone: Complete RC2 QA testing | milestone | 0d | 2009-06-25 | 2009-06-25 | 72, 73, 75, 74 | 23d | 0d |  |  |
| 77 | 1.6.4 | Milestone: Complete RC2 Construction | milestone | 0d | 2009-06-25 | 2009-06-25 | 76 | 23d |  |  |  |

| ID | WBS | Task | Type | Duration | Start | Finish | Predecessors | Total slack | Free slack | Resources | Work |
| --- | --- | --- | --- | --- | --- | --- | --- | --- | --- | --- | --- |
| 78 | 1.7 | **Construction RC3** |  | 45d | 2009-05-19 | 2009-07-21 |  | 5d |  |  | 360h |
| 79 | 1.7.1 | Milestone: Begin RC3 Construction | milestone | 0d | 2009-05-19 | 2009-05-19 | 67 | 17d | 0d |  |  |
| 80 | 1.7.2 | **Implementation** |  | 10d | 2009-05-20 | 2009-06-02 |  | 17d |  |  |  |
| 81 | 1.7.2.1 | Implement RC3 items |  | 8d | 2009-05-20 | 2009-05-29 | 79 | 17d | 0d |  |  |
| 82 | 1.7.2.2 | Verify RC3 items on DEV tier |  | 1d | 2009-06-01 | 2009-06-01 | 81 | 17d | 0d |  |  |
| 83 | 1.7.2.3 | Milestone: Deploy RC3 to QA | milestone | 1d | 2009-06-02 | 2009-06-02 | 82 | 17d | 0d |  |  |
| 84 | 1.7.3 | **QA Testing** |  | 35d | 2009-06-03 | 2009-07-21 | 83 | 5d |  |  | 360h |
| 85 | 1.7.3.1 | 230RC3: Verify new items on QA |  | 5d | 2009-06-26 | 2009-07-02 | 83, 72 | 0d |  | misquitt | 40h |
| 86 | 1.7.3.2 | 230RC3: Regression test on QA |  | 3d | 2009-06-22 | 2009-06-24 | 83, 73 | 6d | 0d | khannave | 24h |
| 87 | 1.7.3.3 | Deployment test on QA-VM |  | 5d | 2009-06-25 | 2009-07-01 | 86 | 19d |  | stagebox; webapp | 80h |
| 88 | 1.7.3.4 | Deploy RC3 to STAGE |  | 1d | 2009-07-03 | 2009-07-03 | 85, 86 | 0d |  | misquitt | 8h |
| 89 | 1.7.3.5 | 230RC3: Verify new items on STAGE |  | 7d | 2009-07-09 | 2009-07-17 | 88, 91 | 0d |  | khannave | 56h |
| 90 | 1.7.3.6 | 230RC3: Regression test on STAGE |  | 3d | 2009-07-09 | 2009-07-13 | 88, 91 | 4d |  | reddya | 24h |
| 91 | 1.7.3.7 | App scan on STAGE |  | 3d | 2009-07-06 | 2009-07-08 | 88 | 0d |  | stagebox; security | 48h |
| 92 | 1.7.3.8 | Installer testing |  | 8d | 2009-06-03 | 2009-06-12 |  | 25d |  | reddya | 64h |
| 93 | 1.7.3.9 | LSD compliance testing |  | 2d | 2009-07-20 | 2009-07-21 | 92, 89, 90 | 0d |  | reddya | 16h |
| 94 | 1.7.3.10 | Milestone: Complete RC3 QA testing | milestone | 0d | 2009-07-21 | 2009-07-21 | 89, 90, 93 | 0d |  |  |  |
| 95 | 1.7.4 | Milestone: Complete RC3 Construction | milestone | 0d | 2009-07-21 | 2009-07-21 | 94 | 2d | 0d |  |  |
| 96 | 1.8 | **Transition** |  | 62d | 2009-05-04 | 2009-07-28 |  | 0d |  |  |  |
| 97 | 1.8.1 | **CBIIT Deployment** |  | 3d | 2009-07-22 | 2009-07-24 | 95 | 2d |  |  |  |
| 98 | 1.8.1.1 | Deploy to PROD |  | 2d | 2009-07-22 | 2009-07-23 |  | 2d | 0d |  |  |
| 99 | 1.8.1.2 | Verify PROD deployment |  | 1d | 2009-07-24 | 2009-07-24 | 98 | 2d | 0d |  |  |
| 100 | 1.8.1.3 | Milestone: Complete PROD deployment | milestone | 0d | 2009-07-24 | 2009-07-24 | 99 | 2d |  |  |  |
| 101 | 1.8.2 | **All Release Artifacts** |  | 62d | 2009-05-04 | 2009-07-28 |  | 0d |  |  |  |
| 102 | 1.8.2.1 | **User's Guide** |  | 21d | 2009-05-04 | 2009-06-01 |  | 37d |  |  |  |
| 103 | 1.8.2.1.1 | Send changes to Jill |  | 1d | 2009-05-04 | 2009-05-04 | 50 | 37d | 0d |  |  |
| 104 | 1.8.2.1.2 | Update User's Guide |  | 15d | 2009-05-05 | 2009-05-25 | 103 | 37d | 0d |  |  |
| 105 | 1.8.2.1.3 | Revise User's Guide after review |  | 5d | 2009-05-26 | 2009-06-01 | 104 | 37d | 0d |  |  |
| 106 | 1.8.2.1.4 | Milestone: Complete User's Guide | milestone | 0d | 2009-06-01 | 2009-06-01 | 105 | 37d |  |  |  |

| ID | WBS | Task | Type | Duration | Start | Finish | Predecessors | Total slack | Free slack |
| --- | --- | --- | --- | --- | --- | --- | --- | --- | --- |
| 107 | 1.8.2.2 | **Installation Guide** |  | 22d | 2009-05-20 | 2009-06-18 |  | 24d |  |
| 108 | 1.8.2.2.1 | Update BDA wiki page with installer properties |  | 1d | 2009-05-20 | 2009-05-20 | 67 | 24d | 0d |
| 109 | 1.8.2.2.2 | Send changes to Jill |  | 1d | 2009-05-21 | 2009-05-21 | 108 | 24d | 0d |
| 110 | 1.8.2.2.3 | Update Installation Guide |  | 15d | 2009-05-22 | 2009-06-11 | 109 | 24d | 0d |
| 111 | 1.8.2.2.4 | Revise Installation Guide after review |  | 5d | 2009-06-12 | 2009-06-18 | 110 | 24d | 0d |
| 112 | 1.8.2.2.5 | Milestone: Complete Installation Guide | milestone | 0d | 2009-06-18 | 2009-06-18 | 111 | 24d |  |
| 113 | 1.8.2.3 | **Other Release Artifacts** |  | 1d | 2009-07-22 | 2009-07-22 | 94 | 0d |  |
| 114 | 1.8.2.3.1 | Prepare Release Notes |  | 1d | 2009-07-22 | 2009-07-22 |  | 0d |  |
| 115 | 1.8.2.3.2 | Prepare Client Libraries and javadoc |  | 1d | 2009-07-22 | 2009-07-22 |  | 0d |  |
| 116 | 1.8.2.3.3 | Prepare installer packages |  | 1d | 2009-07-22 | 2009-07-22 |  | 0d |  |
| 117 | 1.8.2.3.4 | Milestone: Complete other release artifacts | milestone | 0d | 2009-07-22 | 2009-07-22 | 114, 115, 116 | 0d |  |
| 118 | 1.8.2.4 | **Update sites and Announce release** |  | 4d | 2009-07-23 | 2009-07-28 | 112, 106, 117 | 0d |  |
| 119 | 1.8.2.4.1 | Update caArray Gforge site |  | 1d | 2009-07-23 | 2009-07-23 |  | 3d |  |
| 120 | 1.8.2.4.2 | Update Download Centre page |  | 4d | 2009-07-23 | 2009-07-28 |  | 0d |  |
| 121 | 1.8.2.4.3 | Update Tools page |  | 1d | 2009-07-23 | 2009-07-23 |  | 3d |  |
| 122 | 1.8.2.4.4 | Update Landing site |  | 1d | 2009-07-23 | 2009-07-23 |  | 3d |  |
| 123 | 1.8.2.4.5 | Update LSD Gforge site |  | 1d | 2009-07-23 | 2009-07-23 |  | 3d |  |
| 124 | 2 | caArray 2.3.0 Closeout | milestone | 0d | 2009-07-28 | 2009-07-28 | 101, 100 | 0d |  |
