# inception_iteration

Schedule from MS Project, 2007-04-02 to 2007-05-18, A marks actual dates.
Rational Software Corporation

## Calendars

- Standard: Mon-Sun 08:00-12:00, 13:00-17:00.

## Resources

| Resource |
| --- |
| etavela |
| smatyas |
| bgendleman |
| rdaly |
| jpike |
| rsrinavasa |
| bg |
| smiller |

## Schedule

| ID | WBS | Task | Type | Duration | Start | Finish | Predecessors | Complete | Remaining | Total slack | Free slack | Constraint | Resources | Work |
| --- | --- | --- | --- | --- | --- | --- | --- | --- | --- | --- | --- | --- | --- | --- |
| 1 | 1 | **caArray 2.0** |  | 46.25d? | 2007-04-02 A | 2007-05-18 |  | 2% | 45.51d? | 0d |  |  |  | 872h |
| 2 | 1.1 | **Inception Phase** |  | 43.25d? | 2007-04-02 A | 2007-05-15 |  | 2% | 42.52d? | 3d |  |  |  | 852h |
| 3 | 1.1.1 | **Inception Iteration 1** |  | 43.25d? | 2007-04-02 A | 2007-05-15 |  | 2% | 42.52d? | 3d |  |  |  | 852h |
| 4 | 1 | **Project Management** |  | 43.25d? | 2007-04-02 | 2007-05-15 |  |  |  | 0d |  |  |  | 720h |
| 5 | 1.1 | Plan the project |  | 30d | 2007-04-02 | 2007-05-01 |  |  |  | 8.25d | 0d | start no earlier than 2007-04-02 | rdaly; etavela; bgendleman | 720h |
| 6 | 1.4 | Plan Remainder of Initial Iteration |  | 1d | 2007-04-04 | 2007-04-04 |  |  |  | 38.25d | 0d | finish no earlier than 2007-04-04 |  |  |
| 7 | 1.8 | Plan for Next Iteration |  | 5d | 2007-05-07 | 2007-05-11 | 12FF |  |  | 3.25d |  |  |  |  |
| 8 | 1.1.1.1.4 | **Finalize Deliverables** |  | 43.25d? | 2007-04-02 | 2007-05-15 |  |  |  | 0d |  |  |  |  |
| 9 | 1.1.1.1.4.1 | March Status Report |  | 2h | 2007-04-16 | 2007-04-16 |  |  |  | 29d |  | start no earlier than 2007-04-16 |  |  |
| 10 | 1.1.1.1.4.2 | April Status Report |  | 2h | 2007-05-15 | 2007-05-15 |  |  |  | 0d |  | start no earlier than 2007-05-15 |  |  |
| 11 | 1.1.1.1.4.3 | Release Risk List |  | 1d? | 2007-04-02 | 2007-04-02 |  |  |  | 42.25d |  |  |  |  |
| 12 | 1.9 | Release Software Development Plan |  | 1d | 2007-05-11 | 2007-05-11 |  |  |  | 3.25d | 0d | start no earlier than 2007-05-11 |  |  |
| 13 | 3 | **Requirements** |  | 28.5d? | 2007-04-02 A | 2007-04-30 |  | 8% | 26.2d? | 17.75d |  |  |  | 84h |
| 14 | 3.1 | Define the Preliminary Vision |  | 5d | 2007-04-25 | 2007-04-30 | 5SS, 15FF |  |  | 17.75d |  | start no earlier than 1999-05-04 |  |  |
| 15 | 3.2 | **Elicit Stakeholder Needs** |  | 26.5d? | 2007-04-04 | 2007-04-30 | 5SS |  |  | 17.75d | 0d |  |  | 68h |
| 16 | 1.1.1.2.2.1 | Live Meeting with NCICB Stakeholders |  | 3d? | 2007-04-04 | 2007-04-06 |  |  |  | 41.25d |  | finish no earlier than 2007-04-06 | bgendleman; rdaly; etavela [25%] | 54h |
| 17 | 1.1.1.2.2.2 | Teleconference with Northwestern |  | 2h | 2007-04-20 | 2007-04-20 |  |  |  | 28d |  | start no earlier than 2007-04-20 | bgendleman | 2h |
| 18 | 1.1.1.2.2.3 | Live Meeting with Georgetown |  | 4h | 2007-04-23 | 2007-04-23 |  |  |  | 24.75d |  | start no earlier than 2007-04-23 | bgendleman | 4h |
| 19 | 1.1.1.2.2.4 | Live Meeting with Thomas Jefferson |  | 4h | 2007-04-26 | 2007-04-26 |  |  |  | 21.75d |  | start no earlier than 2007-04-26 | bgendleman | 4h |
| 20 | 1.1.1.2.2.5 | Live Meeting with U Pitt |  | 4h | 2007-04-30 | 2007-04-30 |  |  |  | 17.75d |  | start no earlier than 2007-04-30 | bgendleman | 4h |
| 21 | 3.3 | Identify and Describe Use Cases |  | 3d | 2007-04-06 | 2007-04-08 |  |  |  | 39.25d | 9d | start no earlier than 2007-04-06 |  |  |
| 22 | 3.5 | Refine the System Definition | milestone | 0d | 2007-04-18 | 2007-04-18 | 6, 21 |  |  | 30.25d |  | start no earlier than 2007-04-18 |  |  |
| 23 | 3.6 | Manage Changing Requirements |  | 2d | 2007-04-25 A | 2007-04-26 A | 14SS | 100% |  |  |  | start no earlier than 2007-04-25 |  |  |
| 24 | 1.1.1.2.6 | **Finalize Deliverables** |  | 5d? | 2007-04-02 | 2007-04-06 |  |  |  | 38.25d |  |  |  | 16h |
| 25 | 1.1.1.2.6.1 | Finalize Questionnaire |  | 2d | 2007-04-02 | 2007-04-03 |  |  |  | 41.25d |  |  | bgendleman | 16h |
| 26 | 1.1.1.2.6.2 | Finalize Vision Document |  | 1d? | 2007-04-02 | 2007-04-02 |  |  |  | 42.25d |  |  |  |  |
| 27 | 1.1.1.2.6.3 | Finalize Supplementary Spec |  | 1d? | 2007-04-02 | 2007-04-02 |  |  |  | 42.25d |  |  |  |  |
| 28 | 1.1.1.2.6.4 | Detail Prioritized Use Cases |  | 5d | 2007-04-02 | 2007-04-06 |  |  |  | 38.25d |  |  |  |  |
| 29 | 1.1.1.2.6.5 | Finalize Use Case Model |  | 1d? | 2007-04-02 | 2007-04-02 |  |  |  | 42.25d |  |  |  |  |

| ID | WBS | Task | Type | Duration | Start | Finish | Predecessors | Total slack | Free slack | Constraint | Resources | Work |
| --- | --- | --- | --- | --- | --- | --- | --- | --- | --- | --- | --- | --- |
| 30 | 4 | **Analysis and Design** |  | 8d | 2007-04-02 | 2007-04-09 |  | 38.25d |  |  |  |  |
| 31 | 4.1 | Perform Architectural Synthesis |  | 5d | 2007-04-05 | 2007-04-09 | 6 | 38.25d |  |  |  |  |
| 32 | 1.1.1.3.2 | **Finalize Deliverables** |  | 5d | 2007-04-02 | 2007-04-06 |  | 41.25d |  |  |  |  |
| 33 | 1.1.1.3.2.1 | Release Candidate Software Architecture Document |  | 5d | 2007-04-02 | 2007-04-06 |  | 41.25d |  |  |  |  |
| 34 | 5 | **Test** |  | 1d? | 2007-04-02 | 2007-04-02 |  | 42.25d |  |  |  |  |
| 35 | 5.1 | Define Evaluation Mission |  | 1d | 2007-04-02 | 2007-04-02 |  | 45.25d |  |  |  |  |
| 36 | 1.1.1.4.2 | **Finalize Deliverables** |  | 1d? | 2007-04-02 | 2007-04-02 |  | 42.25d |  |  |  |  |
| 37 | 1.1.1.4.2.1 | Release Test Plan |  | 1d? | 2007-04-02 | 2007-04-02 |  | 42.25d |  |  |  |  |
| 38 | 6 | **Environment** |  | 13d | 2007-04-02 | 2007-04-14 |  | 33.25d |  |  |  | 48h |
| 39 | 6.1 | Prepare Environment for Project |  | 2d | 2007-04-02 | 2007-04-03 |  | 33.25d | 0d | start no earlier than 2007-04-02 | etavela; smatyas; smiller | 48h |
| 40 | 6.2 | Prepare Environment for an Iteration |  | 1d | 2007-04-04 | 2007-04-04 | 39, 6SS | 33.25d | 0d |  |  |  |
| 41 | 6.4 | Support Environment During an Iteration |  | 10d | 2007-04-05 | 2007-04-14 | 40 | 33.25d |  |  |  |  |
| 42 | 1.1.1.5.4 | **Finalize Deliverables** |  | 2d | 2007-04-02 | 2007-04-03 |  | 41.25d |  |  |  |  |
| 43 | 1.1.1.5.4.1 | Release Development Case |  | 2d | 2007-04-02 | 2007-04-03 |  | 41.25d |  |  |  |  |
| 44 | 7 | **Configuration & Change Management** |  | 38d? | 2007-04-02 | 2007-05-09 |  | 8.25d |  |  |  |  |
| 45 | 7.1 | Plan Project Configuration and Change Control |  | 1d | 2007-05-02 | 2007-05-02 | 5 | 8.25d | 0d |  |  |  |
| 46 | 7.2 | Create Project CM Environments |  | 1d | 2007-05-03 | 2007-05-03 | 45, 6SS | 8.25d | 0d |  |  |  |
| 47 | 7.3 | Change and Deliver Configuration Items |  | 6d | 2007-05-04 | 2007-05-09 | 46 | 8.25d |  |  |  |  |
| 48 | 7.4 | Manage Baselines and Releases |  | 6d | 2007-05-04 | 2007-05-09 | 46 | 8.25d |  |  |  |  |
| 49 | 7.5 | Manage Change Requests |  | 6d | 2007-05-04 | 2007-05-09 | 46 | 8.25d |  |  |  |  |
| 50 | 7.6 | Monitor and Report Configuration Status |  | 6d | 2007-05-04 | 2007-05-09 | 46 | 8.25d |  |  |  |  |
| 51 | 1.1.1.6.7 | **Finalize Deliverables** |  | 1d? | 2007-04-02 | 2007-04-02 |  | 42.25d |  |  |  |  |
| 52 | 1.1.1.6.7.1 | Release Configuration Management Plan |  | 1d? | 2007-04-02 | 2007-04-02 |  | 42.25d |  |  |  |  |
| 53 | 1.1.1.6.7.2 | Release Development Case |  | 1d? | 2007-04-02 | 2007-04-02 |  | 42.25d |  |  |  |  |
| 54 | 1.1.1.7 | Inception Complete | milestone | 0d | 2007-05-15 | 2007-05-15 | 4, 5, 24, 8, 36, 42, 51 | 0d |  |  |  |  |

| ID | WBS | Task | Type | Duration | Start | Finish | Predecessors | Total slack | Constraint | Resources | Work |
| --- | --- | --- | --- | --- | --- | --- | --- | --- | --- | --- | --- |
| 55 | 1.2 | **Elaboration Phase** |  | 1d? | 2007-05-15 | 2007-05-16 | 54 | 0d |  |  | 20h |
| 56 | 1.2.1 | **Elaboration - Iteration 1** |  | 0.5d | 2007-05-15 | 2007-05-15 |  | 0.5d |  |  | 20h |
| 57 | 1.2.1.1 | Iteration Post Mortem |  | 4h | 2007-05-15 | 2007-05-15 | 54 | 0.5d | start no earlier than 2007-05-14 | etavela; bgendleman; smatyas; jpike; rsrinavasa | 20h |
| 58 | 1.2.2 | Elaboration - Iteration 2 |  | 1d? | 2007-05-15 | 2007-05-16 |  | 0d |  |  |  |
| 59 | 1.2.3 | Elaboration - Iteration n |  | 1d? | 2007-05-15 | 2007-05-16 |  | 0d |  |  |  |
| 60 | 1.3 | **Construction Phase** |  | 1d? | 2007-05-16 | 2007-05-17 | 55 | 0d |  |  |  |
| 61 | 1.3.1 | Construction - Iteration 1 |  | 1d? | 2007-05-16 | 2007-05-17 |  | 0d |  |  |  |
| 62 | 1.3.2 | Construction - Iteration 2 | milestone | 1d? | 2007-05-16 | 2007-05-17 |  | 0d |  |  |  |
| 63 | 1.3.3 | Construction - Iteration n | milestone | 1d? | 2007-05-16 | 2007-05-17 |  | 0d |  |  |  |
| 64 | 1.4 | **Transition Phase** |  | 1d? | 2007-05-17 | 2007-05-18 | 60 | 0d |  |  |  |
| 65 | 1.4.1 | Transition - Iteration 1 | milestone | 1d? | 2007-05-17 | 2007-05-18 |  | 0d |  |  |  |
| 66 | 1.4.2 | Transition - Iteration n | milestone | 1d? | 2007-05-17 | 2007-05-18 |  | 0d |  |  |  |
