# inception_iteration

Schedule from MS Project, 2007-04-02 to 2007-05-21, A marks actual dates.
Rational Software Corporation

## Calendars

- Standard: Mon-Fri 08:00-12:00, 13:00-17:00; Sat-Sun off.

## Resources

| Resource |
| --- |
| etavela |
| smatyas |
| bgendleman |
| rdaly |
| jpike |
| rsrinavasa |
| smiller |

## Schedule

| ID | WBS | Task | Duration | Start | Finish | Predecessors | Complete | Remaining | Baseline start | Baseline finish | Baseline duration | Total slack | Free slack | Constraint | Deadline | Resources | Work | Actual work |
| --- | --- | --- | --- | --- | --- | --- | --- | --- | --- | --- | --- | --- | --- | --- | --- | --- | --- | --- |
| 1 | 1 | **caArray 2.0** | 35.9d? | 2007-04-02 A | 2007-05-21 |  | 56% | 15.94d? | 2007-04-02 | 2007-05-21 | 35.75d? | 0d |  |  |  |  | 923.28h | 578.28h |
| 2 | 1.1 | **Inception Phase** | 33.3d | 2007-04-02 A | 2007-05-17 |  | 59% | 13.59d | 2007-04-02 | 2007-05-15 | 32d | 2.6d |  |  |  |  | 903.28h | 578.28h |
| 3 | 1.1.1 | **Inception Iteration 1** | 33.3d | 2007-04-02 A | 2007-05-17 |  | 59% | 13.59d | 2007-04-02 | 2007-05-15 | 32d | 2.6d |  |  |  |  | 903.28h | 578.28h |
| 4 | 1 | **Project Management** | 31.25d | 2007-04-02 A | 2007-05-15 |  | 49% | 15.82d | 2007-04-02 | 2007-05-15 | 31.25d | 0.15d |  |  |  |  | 20h | 17.6h |
| 5 | 1.1.1.1.1 | Plan the project | 12d | 2007-04-02 A | 2007-04-19 |  | 50% | 6d | 2007-04-02 | 2007-04-19 | 12d | 17.4d | 2d | start no earlier than 2007-04-02 |  | rdaly [5%]; bgendleman | 20h | 17.6h |
| 6 | 1.4 | Plan Remainder of Initial Iteration | 1d | 2007-04-19 A | 2007-04-19 A |  | 100% |  | 2007-04-19 | 2007-04-19 | 1d |  |  | start no earlier than 2007-04-19 |  |  |  |  |
| 7 | 1.8 | Plan for Next Iteration | 5d | 2007-05-07 A | 2007-05-11 | 12FF | 50% | 2.5d | 2007-05-07 | 2007-05-11 | 5d | 1.4d |  |  |  |  |  |  |
| 8 | 1.1.1.1.4 | **Finalize Deliverables** | 31.25d | 2007-04-02 A | 2007-05-15 |  | 14% | 26.79d | 2007-04-02 | 2007-05-15 | 31.25d | 0.15d |  |  |  |  |  |  |
| 9 | 1.1.1.1.4.1 | March Status Report | 2h | 2007-04-16 A | 2007-04-16 A |  | 100% |  | 2007-04-16 | 2007-04-16 | 2h |  |  | start no earlier than 2007-04-16 | 2007-04-18 |  |  |  |
| 10 | 1.1.1.1.4.2 | April Status Report | 2h | 2007-05-15 | 2007-05-15 |  |  |  | 2007-05-15 | 2007-05-15 | 2h | 0.15d |  | start no earlier than 2007-05-15 | 2007-05-15 |  |  |  |
| 11 | 1.1.1.1.4.3 | Release Risk List | 2h | 2007-04-02 | 2007-04-02 |  |  |  | 2007-04-02 | 2007-04-02 | 2h | 31.15d |  |  | 2007-05-15 |  |  |  |
| 12 | 1.9 | Release Software Development Plan | 1d | 2007-05-11 | 2007-05-11 |  |  |  | 2007-05-11 | 2007-05-11 | 1d | 1.4d | 0d | start no earlier than 2007-05-11 |  |  |  |  |
| 13 | 3 | **Requirements** | 30.5d | 2007-04-02 A | 2007-05-14 |  | 48% | 15.86d | 2007-04-02 | 2007-05-14 | 30.35d | 5.4d |  |  |  |  | 184.6h | 89.2h |
| 14 | 3.1 | Define the Preliminary Vision | 5d | 2007-04-23 A | 2007-05-04 A | 5SS, 15FF | 100% |  | 2007-04-23 | 2007-05-04 | 5d |  |  | start no earlier than 1999-05-04 |  |  |  |  |
| 15 | 3.2 | **Elicit Stakeholder Needs** | 22.4d | 2007-04-04 A | 2007-05-04 | 5SS | 68% | 7.17d | 2007-04-04 | 2007-05-04 | 22.75d | 11.5d |  |  |  |  | 45h | 34h |
| 16 | 1.1.1.2.2.1 | Live Meeting with NCICB Stakeholders | 4.38d | 2007-04-04 A | 2007-04-12 |  | 77% | 1d | 2007-04-04 | 2007-04-11 | 4.38d | 21.81d |  | start no earlier than 2007-04-04 |  | bgendleman; rdaly; etavela [25%] | 30h | 27h |
| 17 | 1.1.1.2.2.2 | Teleconference with Columbia - Aris | 1h | 2007-04-09 A | 2007-04-09 A | 16 | 100% |  | 2007-04-09 | 2007-04-09 | 1h |  |  |  |  | bgendleman | 1h | 1h |
| 18 | 1.1.1.2.2.3 | Teleconference with Northwestern | 2h | 2007-04-20 A | 2007-04-20 A |  | 100% |  | 2007-04-20 | 2007-04-20 | 2h |  |  | start no earlier than 2007-04-20 |  | bgendleman | 2h | 2h |
| 19 | 1.1.1.2.2.4 | Live Meeting with Georgetown | 4h | 2007-04-23 A | 2007-04-23 A | 18 | 100% |  | 2007-04-27 | 2007-04-27 | 4h |  |  | start no earlier than 2007-04-23 |  | bgendleman | 4h | 4h |
| 20 | 1.1.1.2.2.5 | Live Meeting with Thomas Jefferson | 4h | 2007-04-27 | 2007-04-27 | 19 |  |  | 2007-04-27 | 2007-05-04 | 4h | 6.15d | 0.15d | start no earlier than 2007-04-26 |  | bgendleman | 4h |  |
| 21 | 1.1.1.2.2.6 | Live Meeting with U Pitt | 4h | 2007-05-03 | 2007-05-04 | 20 |  |  | 2007-05-04 | 2007-05-04 | 4h | 5.6d | 0d | start no earlier than 2007-04-30 |  | bgendleman | 4h |  |
| 22 | 3.3 | Identify and Describe Use Cases | 4d | 2007-04-18 A | 2007-04-23 |  | 50% | 2d | 2007-04-18 | 2007-04-23 | 4d | 8.4d | 0d | finish no earlier than 2007-04-20 |  | bgendleman; rdaly | 56h | 32h |
| 23 | 3.5 | Refine the System Definition | 6.35d | 2007-04-24 | 2007-05-04 | 6, 22 |  |  | 2007-04-24 | 2007-05-10 | 6.25d | 10.9d |  | start no earlier than 2007-04-18 |  | bgendleman; etavela [10%] | 20h |  |
| 24 | 1.1.1.2.5 | **Implement Requirement and Test Traceability** | 3.25d | 2007-04-16 A | 2007-04-19 |  | 50% | 1.62d | 2007-04-16 | 2007-04-20 | 4.6d | 22.65d |  |  |  |  | 3.6h | 1.8h |
| 25 | 1.1.1.2.5.1 | Determine Approach | 2.25d | 2007-04-16 A | 2007-04-19 |  | 50% | 1.12d | 2007-04-16 | 2007-04-20 | 2.25d | 22.65d |  | start no earlier than 2007-04-16 |  | bgendleman [20%]; etavela [20%] | 3.6h | 1.8h |
| 26 | 3.6 | Manage Changing Requirements | 1d | 2007-04-27 A | 2007-05-04 | 14SS | 50% | 0.5d | 2007-04-27 | 2007-05-04 | 1d | 11.6d |  | start no earlier than 2007-04-25 |  | bgendleman | 8h | 4h |

Notes:
- 16: expect follow up with Suba, Mervi and Xiaopeng as requirements contributors

| ID | WBS | Task | Duration | Start | Finish | Predecessors | Complete | Remaining | Baseline start | Baseline finish | Baseline duration | Total slack | Free slack | Constraint | Deadline | Resources | Work | Actual work |
| --- | --- | --- | --- | --- | --- | --- | --- | --- | --- | --- | --- | --- | --- | --- | --- | --- | --- | --- |
| 27 | 1.1.1.2.7 | **Finalize Deliverables** | 30.5d | 2007-04-02 A | 2007-05-14 |  | 33% | 20.29d | 2007-04-02 | 2007-05-14 | 30.35d | 0.9d |  |  |  |  | 52h | 17.4h |
| 28 | 1.1.1.2.7.1 | Requirements Management Plan | 0.25d | 2007-04-02 A | 2007-04-09 |  | 50% | 0.12d | 2007-04-02 | 2007-04-09 | 0.25d | 26.27d |  |  |  | bgendleman | 2h | 1h |
| 29 | 1.1.1.2.7.2 | Finalize Questionnaire | 0.25d | 2007-04-02 A | 2007-04-02 A |  | 100% |  | 2007-04-02 | 2007-04-02 | 0.25d |  |  |  |  | bgendleman | 2h | 2h |
| 30 | 1.1.1.2.7.3 | Finalize Vision Document | 1d | 2007-04-30 A | 2007-05-11 | 21, 14 | 90% | 0.1d | 2007-04-30 | 2007-05-11 | 1d | 1.4d | 0d |  |  | bgendleman | 8h | 7.2h |
| 31 | 1.1.1.2.7.4 | Finalize Supplementary Spec | 1d | 2007-05-11 A | 2007-05-14 | 30 | 50% | 0.5d | 2007-05-11 | 2007-05-14 | 1d | 0.9d |  |  |  | bgendleman | 8h | 4h |
| 32 | 1.1.1.2.7.5 | Detail Prioritized Use Cases | 3d | 2007-04-27 | 2007-05-11 |  |  |  | 2007-04-27 | 2007-05-11 | 3d | 1.4d |  | start no earlier than 2007-04-23 |  | bgendleman | 24h |  |
| 33 | 1.1.1.2.7.6 | Finalize Use Case Model | 1d | 2007-04-27 A | 2007-05-03 | 22 | 40% | 0.6d | 2007-04-27 | 2007-05-04 | 1d | 1.1d |  |  | 2007-05-04 | bgendleman | 8h | 3.2h |
| 34 | 4 | **Analysis and Design** | 33.3d | 2007-04-02 A | 2007-05-17 |  | 58% | 13.92d | 2007-04-02 | 2007-04-20 | 15d | 2.6d |  |  |  |  | 111.68h | 69.79h |
| 35 | 4.1 | Use Case Analysis (Manage Protocols) | 1d | 2007-04-05 A | 2007-04-05 A |  | 100% |  | 2007-04-05 | 2007-04-05 | 1d |  |  | start no earlier than 2007-04-05 |  | etavela | 8h | 8h |
| 36 | 1.1.1.3.2 | Use Case Design (Manage Protocols) | 1d | 2007-04-06 A | 2007-04-06 A | 35 | 100% |  | 2007-04-06 | 2007-04-06 | 1d |  |  |  |  | etavela | 8h | 8h |
| 37 | 1.1.1.3.3 | Vocabulary Management Subsystem Design | 4.95d | 2007-04-04 A | 2007-04-12 |  | 80% | 0.99d | 2007-04-04 | 2007-04-12 | 4.95d | 15.7d | 0.5d | start no earlier than 2007-04-04 |  | etavela [10%]; jpike | 26.08h | 25.29h |
| 38 | 1.1.1.3.4 | Data Access Subsystem Design | 2.75d | 2007-04-09 A | 2007-04-13 |  | 82% | 0.5d | 2007-04-09 | 2007-04-20 | 3d | 5.29d |  | start no earlier than 2007-04-09 | 2007-04-20 | rsrinavasa; etavela [25%] | 18h | 13.5h |
| 39 | 1.1.1.3.5 | MAGE-OM Façade | 4.5d | 2007-04-02 A | 2007-04-10 |  | 40% | 2.7d | 2007-04-02 | 2007-04-10 | 4.5d | 23.9d | 0d |  |  | rsrinavasa; etavela [25%] | 30h | 15h |
| 40 | 1.1.1.3.6 | **Finalize Deliverables** | 3.3d | 2007-05-14 | 2007-05-17 |  |  |  | 2007-04-11 | 2007-04-19 | 6d | 2.6d |  |  |  |  | 21.6h |  |
| 41 | 1.1.1.3.6.1 | Release Candidate Software Architecture Document | 3d | 2007-05-14 | 2007-05-17 |  |  |  | 2007-04-11 | 2007-04-19 | 5d | 2.6d |  | start no earlier than 2007-05-14 |  | etavela [90%] | 21.6h |  |
| 42 | 1.1.1.4 | **Implementation** | 32d | 2007-04-02 A | 2007-05-15 |  | 73% | 8.63d | 2007-04-02 | 2007-05-15 | 32d | 3.9d |  |  |  |  | 393.2h | 297.2h |
| 43 | 1.1.1.4.1 | Structure the Implementation Model | 1.5d | 2007-04-02 A | 2007-04-04 A |  | 100% |  | 2007-04-02 | 2007-04-04 | 1.5d |  |  | start no earlier than 2007-04-09 | 2007-04-06 | etavela | 12h | 12h |
| 44 | 1.1.1.4.2 | Implement Vocabulary Subsystem | 3w | 2007-04-13 A | 2007-05-08 A | 43, 37 | 100% |  | 2007-04-12 | 2007-05-08 | 3w |  |  |  |  | jpike | 120h | 120h |
| 45 | 1.1.1.4.3 | Implement MAGE-OM | 2w | 2007-04-10 A | 2007-04-27 | 43, 39 | 50% | 1w | 2007-04-10 | 2007-04-30 | 2w | 16.52d |  |  |  | rsrinavasa | 80h | 40h |
| 46 | 1.1.1.4.4 | Implement Data Access | 3d | 2007-04-16 A | 2007-04-30 | 43 | 90% | 0.3d | 2007-04-16 | 2007-04-24 | 3d | -5.38d | 0d | start no earlier than 2007-04-16 | 2007-04-20 | rsrinavasa | 24h | 21.6h |
| 47 | 1.1.1.4.5 | Implement MAGE-OM Façade | 1.7w | 2007-04-18 | 2007-05-15 |  |  |  | 2007-04-19 | 2007-05-15 | 1.7w | 3.9d |  | start no earlier than 2007-04-18 |  | etavela [25%]; rsrinavasa | 50h |  |
| 48 | 1.1.1.4.6 | Implement Protocol Management | 2.2w | 2007-04-16 A | 2007-05-09 A | 36 | 100% |  | 2007-04-16 | 2007-05-09 | 2.1w |  |  | start no earlier than 2007-04-16 |  | jpike; rsrinavasa; etavela [10%] | 52h | 52h |
| 49 | 1.1.1.4.7 | Implement Protocol User Interface (minimal) | 3d | 2007-05-09 A | 2007-05-14 A | 48 | 100% |  | 2007-05-09 | 2007-05-14 | 3d |  |  |  |  | rsrinavasa; jpike | 48h | 48h |
| 50 | 1.1.1.4.8 | **Finalize Deliverables** | 1d | 2007-05-14 A | 2007-05-15 |  | 50% | 0.5d | 2007-05-14 | 2007-05-15 | 1d | 0d |  |  |  |  | 7.2h | 3.6h |
| 51 | 1.1.1.4.8.1 | Release Architectural Prototype | 1d | 2007-05-14 A | 2007-05-15 | 49 | 50% | 0.5d | 2007-05-14 | 2007-05-15 | 1d | 0d |  |  |  | etavela [90%] | 7.2h | 3.6h |

Notes:
- 45: 2 weeks anticipates that code generation will be a part of it

| ID | WBS | Task | Type | Duration | Start | Finish | Predecessors | Complete | Remaining | Baseline start | Baseline finish | Baseline duration | Total slack | Free slack | Constraint | Deadline | Resources | Work | Actual work |
| --- | --- | --- | --- | --- | --- | --- | --- | --- | --- | --- | --- | --- | --- | --- | --- | --- | --- | --- | --- |
| 52 | 5 | **Test** |  | 31.82d | 2007-04-02 A | 2007-05-15 |  | 10% | 28.72d | 2007-04-02 | 2007-05-15 | 31.07d | 4.08d |  |  |  |  | 27.8h | 2.8h |
| 53 | 1.1.1.5.1 | Meet with Indepdent QA |  | 2h | 2007-04-09 A | 2007-04-09 |  | 50% | 1h | 2007-04-09 | 2007-04-09 | 2h | 14.62d |  | finish no later than 2007-04-27 | 2007-04-27 | bgendleman [80%] | 1.6h | 0.8h |
| 54 | 1.1.1.5.2 | Implement System Tests Against Protocol Management | milestone | 0d | 2007-05-15 A | 2007-05-15 | 51 | 50% | 0d | 2007-05-15 | 2007-05-15 | 0d | 4.08d |  | start no earlier than 2007-05-14 |  | smatyas |  |  |
| 55 | 5.1 | Analyze and Identify Test Approach |  | 1d | 2007-04-02 A | 2007-04-27 |  | 25% | 0.75d | 2007-04-02 | 2007-04-27 | 1d | 6.9d | 0d |  |  | smatyas; etavela; bgendleman | 8h | 2h |
| 56 | 1.1.1.5.4 | **Finalize Deliverables** |  | 4.9d | 2007-04-27 | 2007-05-04 |  |  |  | 2007-04-27 | 2007-05-04 | 5d | 6.9d |  |  |  |  | 18.2h |  |
| 57 | 1.1.1.5.4.1 | Release Test Plan |  | 2.6d | 2007-04-27 | 2007-05-04 | 55 |  |  | 2007-04-27 | 2007-05-04 | 2.5d | 6.9d |  |  |  | smatyas; bgendleman [25%]; etavela [5%] | 18.2h |  |
| 58 | 6 | **Environment** |  | 30.25d | 2007-04-02 A | 2007-05-14 |  | 66% | 10.24d | 2007-04-02 | 2007-05-14 | 30.25d | 5.65d |  |  |  |  | 136h | 93.2h |
| 59 | 1.1.1.6.1 | Launch Development Process |  | 6h | 2007-04-09 A | 2007-04-18 A |  | 100% |  | 2007-04-09 | 2007-04-18 | 6h |  |  | start no earlier than 2007-04-09 |  | smatyas; jpike; smiller; rsrinavasa | 12h | 12h |
| 60 | 1.1.1.6.2 | **Set Up Tools** |  | 20d | 2007-04-02 A | 2007-04-27 |  | 78% | 4.36d | 2007-04-02 | 2007-04-27 | 20d | 15.9d |  |  |  |  | 76h | 56.8h |
| 61 | 1.1.1.6.2.1 | Set Up Maven |  | 4d | 2007-04-02 A | 2007-04-09 A |  | 100% |  | 2007-04-02 | 2007-04-09 | 4d |  |  | start no earlier than 2007-04-02 |  | smatyas [50%]; smiller [50%] | 16h | 16h |
| 62 | 1.1.1.6.2.2 | Set Up Continuous Integration |  | 1d | 2007-04-16 A | 2007-04-16 A |  | 100% |  | 2007-04-16 | 2007-04-16 | 1d |  |  | start no earlier than 2007-04-16 |  | smatyas | 8h | 8h |
| 63 | 1.1.1.6.2.3 | Set Up Eclipse |  | 2d | 2007-04-03 A | 2007-04-06 A |  | 100% |  | 2007-04-03 | 2007-04-06 | 2d |  |  | start no earlier than 2007-04-03 |  | jpike; smiller [50%] | 12h | 12h |
| 64 | 1.1.1.6.2.4 | Set Up Selenium |  | 2d | 2007-04-26 | 2007-04-27 | 62 |  |  | 2007-04-26 | 2007-04-27 | 2d | 0d |  | finish no earlier than 2007-04-27 | 2007-04-27 | smatyas | 16h |  |
| 65 | 1.1.1.6.2.5 | Set Up Code Quality Tools |  | 2d | 2007-04-02 A | 2007-04-09 |  | 80% | 0.4d | 2007-04-02 | 2007-04-09 | 2d | 30.4d |  |  |  | smatyas; etavela | 24h | 20.8h |
| 66 | 1.1.1.6.3 | **Finalize Deliverables** |  | 19.25d | 2007-04-17 A | 2007-05-14 |  | 44% | 10.86d | 2007-04-19 | 2007-05-14 | 17.25d | 1.15d |  |  |  |  | 48h | 24.4h |
| 67 | 1.1.1.6.3.1 | Release Development Case |  | 0.25d | 2007-05-14 A | 2007-05-14 |  | 90% | 0.03d | 2007-05-14 | 2007-05-14 | 0.25d | 1.15d |  | start no earlier than 2007-05-14 |  | etavela | 2h | 1.8h |
| 68 | 1.1.1.6.3.2 | Release Guidelines for the Project |  | 1.25d | 2007-04-20 A | 2007-04-23 |  | 50% | 0.62d | 2007-04-20 | 2007-04-23 | 1.25d | 15.59d |  | start no earlier than 2007-04-16 |  | etavela | 10h | 5h |
| 69 | 1.1.1.6.3.3 | Release Templates for the Project |  | 5.5d | 2007-04-17 A | 2007-04-30 |  | 40% | 3.3d | 2007-04-19 | 2007-04-30 | 5.55d | 10.4d |  | finish no earlier than 2007-04-13 |  | smiller [50%]; etavela | 36h | 17.6h |
| 70 | 7 | **Configuration & Change Management** |  | 31.25d | 2007-04-02 A | 2007-05-15 |  | 25% | 23.44d | 2007-04-02 | 2007-05-15 | 31.25d | 0.6d |  |  |  |  | 30h | 8.5h |
| 71 | 7.1 | Plan Project Configuration and Change Control |  | 0.5d | 2007-04-20 A | 2007-04-20 |  | 50% | 0.25d | 2007-04-20 | 2007-04-24 | 0.55d | 17d |  | finish no earlier than 2007-04-20 | 2007-05-15 | etavela; bgendleman | 8h | 4h |
| 72 | 1.1.1.7.2 | **Finalize Deliverables** |  | 31.25d | 2007-04-02 A | 2007-05-15 |  | 20% | 24.86d | 2007-04-02 | 2007-05-15 | 31.25d | 0d |  |  |  |  | 22h | 4.5h |
| 73 | 1.1.1.7.2.1 | Release Configuration Management Plan |  | 0.75d | 2007-04-02 A | 2007-05-15 |  | 75% | 0.19d | 2007-04-02 | 2007-05-15 | 0.75d | 0d |  |  |  | etavela; bgendleman | 6h | 4.5h |
| 74 | 1.1.1.7.2.2 | G-Forge Implementation of the Change Control Process |  | 2d | 2007-04-02 | 2007-05-14 |  |  |  | 2007-04-02 | 2007-05-14 | 2d | 0.9d |  |  |  | bgendleman | 16h |  |
| 75 | 1.1.1.8 | Inception Complete | milestone | 0d | 2007-05-15 | 2007-05-15 | 4, 5, 27, 8, 56, 66, 72 |  |  | 2007-05-15 | 2007-05-15 | 0d | 0d |  | start no earlier than 2007-05-15 | 2007-05-15 |  |  |  |

Notes:
- 61: Instructions documented on Wiki
- 63: Instructions documented on Wiki
- 65: Cobertura, PMD, CheckStyle, Simian, JUnit
- 68: UML, Java, JSP/HTML
- 69: Java, JSP/HTML / Use Case Summary / Use Case Specification / Vision / Traceability Matrix - will attempt to do in EA

| ID | WBS | Task | Type | Duration | Start | Finish | Predecessors | Baseline start | Baseline finish | Baseline duration | Total slack | Constraint | Resources | Work |
| --- | --- | --- | --- | --- | --- | --- | --- | --- | --- | --- | --- | --- | --- | --- |
| 76 | 1.2 | **Elaboration Phase** |  | 2.5d? | 2007-05-15 | 2007-05-17 | 75 | 2007-05-15 | 2007-05-17 | 2.5d? | 0d |  |  | 20h |
| 77 | 1.2.1 | **Elaboration - Iteration 1** |  | 2.5d | 2007-05-15 | 2007-05-17 |  | 2007-05-15 | 2007-05-17 | 2.5d | 0d |  |  | 20h |
| 78 | 1.2.1.1 | Iteration Post Mortem |  | 20h | 2007-05-15 | 2007-05-17 | 75 | 2007-05-15 | 2007-05-17 | 20h | 0d | start no earlier than 2007-05-14 | smatyas | 20h |
| 79 | 1.2.2 | Elaboration - Iteration 2 |  | 1d? | 2007-05-15 | 2007-05-16 |  | 2007-05-15 | 2007-05-16 | 1d? | 1.5d |  |  |  |
| 80 | 1.2.3 | Elaboration - Iteration n |  | 1d? | 2007-05-15 | 2007-05-16 |  | 2007-05-15 | 2007-05-16 | 1d? | 1.5d |  |  |  |
| 81 | 1.3 | **Construction Phase** |  | 1d? | 2007-05-17 | 2007-05-18 | 76 | 2007-05-17 | 2007-05-18 | 1d? | 0d |  |  |  |
| 82 | 1.3.1 | Construction - Iteration 1 |  | 1d? | 2007-05-17 | 2007-05-18 |  | 2007-05-17 | 2007-05-18 | 1d? | 0d |  |  |  |
| 83 | 1.3.2 | Construction - Iteration 2 | milestone | 1d? | 2007-05-17 | 2007-05-18 |  | 2007-05-17 | 2007-05-18 | 1d? | 0d |  |  |  |
| 84 | 1.3.3 | Construction - Iteration n | milestone | 1d? | 2007-05-17 | 2007-05-18 |  | 2007-05-17 | 2007-05-18 | 1d? | 0d |  |  |  |
| 85 | 1.4 | **Transition Phase** |  | 1d? | 2007-05-18 | 2007-05-21 | 81 | 2007-05-18 | 2007-05-21 | 1d? | 0d |  |  |  |
| 86 | 1.4.1 | Transition - Iteration 1 | milestone | 1d? | 2007-05-18 | 2007-05-21 |  | 2007-05-18 | 2007-05-21 | 1d? | 0d |  |  |  |
| 87 | 1.4.2 | Transition - Iteration n | milestone | 1d? | 2007-05-18 | 2007-05-21 |  | 2007-05-18 | 2007-05-21 | 1d? | 0d |  |  |  |
